# Training Rollout Project

Schedule from MS Project, 2023-03-01 to 2023-09-25.

## Calendars

- Standard: Mon-Fri 09:00-12:00, 13:00-18:00; Sat-Sun off. Exceptions (off unless hours are given): 2023-03-06 to 2024-02-05 (Monthly Meeting, recurring), 2023-05-01 (Spring Bank Holiday), 2023-06-12 to 2023-06-16 (Office Renovations).

## Schedule

| ID | WBS | Task | Type | Duration | Start | Finish | Predecessors | Total slack | Free slack |
| --- | --- | --- | --- | --- | --- | --- | --- | --- | --- |
| 1 | 1 | **PREPARATION PHASE** |  | 12d | 2023-03-01 | 2023-03-17 |  | 11d |  |
| 2 | 1.1 | Conduct course research |  | 10d | 2023-03-01 | 2023-03-15 |  | 127d |  |
| 3 | 1.2 | Draft course outline |  | 3d | 2023-03-01 | 2023-03-03 |  | 46d | 0d |
| 4 | 1.3 | Send outline to training team for review |  | 1d | 2023-03-07 | 2023-03-07 | 3 | 46d | 0d |
| 5 | 1.4 | Update course outline |  | 2d | 2023-03-14 | 2023-03-15 | 4FS+4d | 46d | 0d |
| 6 | 1.5 | Send outline to training manager for review |  | 1d | 2023-03-16 | 2023-03-16 | 5 | 46d | 0d |
| 7 | 1.6 | Outline approved | milestone | 0d | 2023-03-16 | 2023-03-16 | 6 | 46d | 0d |
| 8 | 1.7 | Finalise course outline | manual | 1d | 2023-03-17 | 2023-03-17 | 7 |  |  |
| 9 | 2 | **RECORDING PHASE** |  | 64d | 2023-03-20 | 2023-06-27 |  | 46d |  |
| 10 | 2.1 | Write training notes |  | 10d | 2023-03-20 | 2023-03-31 | 8 | 46d | 0d |
| 11 | 2.2 | Record training videos |  | 30d | 2023-03-27 | 2023-05-09 | 10FS-5d | 46d | 0d |
| 12 | 2.3 | Edit training videos |  | 7d | 2023-05-10 | 2023-05-18 | 11 | 46d | 0d |
| 13 | 2.4 | Upload to the cloud |  | 2d | 2023-05-19 | 2023-05-22 | 12 | 46d | 0d |
| 14 | 2.5 | Quality control review |  | 7d | 2023-05-23 | 2023-05-31 | 13 | 46d | 0d |
| 15 | 2.6 | Make video ammendments |  | 4d | 2023-06-01 | 2023-06-07 | 14 | 46d | 0d |
| 16 | 2.7 | Training team review |  | 7d | 2023-06-08 | 2023-06-23 | 15 | 46d | 0d |
| 17 | 2.8 | Video content approved | milestone | 0d | 2023-06-23 | 2023-06-23 | 16 | 46d | 0d |
| 18 | 2.9 | Upload to LMS |  | 2d | 2023-06-26 | 2023-06-27 | 17 | 61d |  |
| 19 | 3 | **DOCUMENTATION PHASE** |  | 26d | 2023-06-26 | 2023-08-01 |  | 11d |  |
| 20 | 3.1 | Write reference guides |  | 10d | 2023-06-26 | 2023-07-10 | 17 | 46d | 11d |
| 21 | 3.2 | Write course questions | manual | 10d | 2023-07-12 | 2023-07-25 |  |  |  |
| 22 | 3.3 | Write course description for website | manual | 10d | 2023-07-12 | 2023-07-25 |  |  |  |
| 23 | 3.4 | Write exercises | manual | 10d | 2023-07-12 | 2023-07-25 |  |  |  |
| 24 | 3.5 | Quality control review |  | 5d | 2023-07-26 | 2023-08-01 | 20, 21, 22, 23 | 35d | 0d |
| 25 | 3.6 | Documentation approved | milestone | 0d | 2023-08-01 | 2023-08-01 | 24 | 35d | 0d |

| ID | WBS | Task | Type | Duration | Start | Finish | Predecessors | Total slack | Free slack | Constraint |
| --- | --- | --- | --- | --- | --- | --- | --- | --- | --- | --- |
| 26 | 4 | **GO LIVE PHASE** |  | 2d | 2023-08-02 | 2023-08-03 |  | 35d |  |  |
| 27 | 4.1 | Upload to LMS |  | 2d | 2023-08-02 | 2023-08-03 | 25 | 35d | 0d |  |
| 28 | 4.2 | Set course live | milestone | 0d | 2023-08-03 | 2023-08-03 | 27 | 35d |  |  |
| 29 | 5 | **LIVE TRAINING PHASE** |  | 34d | 2023-08-07 | 2023-09-25 |  | 0d |  |  |
| 30 | 5.1 | **Organise Training Teams** |  | 25d | 2023-08-07 | 2023-09-12 |  | 0d |  |  |
| 31 | 5.1.1 | Assign trainers to teams | manual | 2d | 2023-08-07 | 2023-08-08 |  |  |  |  |
| 32 | 5.1.2 | Assign teams to regions | manual | 4d | 2023-08-09 | 2023-08-14 | 31 |  |  | start no earlier than 2023-08-09 |
| 33 | 5.1.3 | **Travel and Accommodation** |  | 11d | 2023-08-28 | 2023-09-12 |  | 4d |  |  |
| 34 | 5.1.3.1 | Research local hotels |  | 7d | 2023-08-28 | 2023-09-06 | 47 | 13d |  |  |
| 35 | 5.1.3.2 | **Create hotel shortlist** |  | 5d | 2023-09-01 | 2023-09-08 |  | 0d |  |  |
| 36 | 5.1.3.2.1 | Send shortlist to training manager | manual | 1d | 2023-09-01 | 2023-09-01 |  |  |  | start no earlier than 2023-09-01 |
| 37 | 5.1.3.2.2 | Get budget approval |  | 4d | 2023-09-05 | 2023-09-08 | 36 | 0d |  |  |
| 38 | 5.1.3.3 | Book hotel |  | 1d | 2023-09-11 | 2023-09-11 | 37 | 0d |  |  |
| 39 | 5.1.3.4 | Hotel booked | milestone | 0d | 2023-09-11 | 2023-09-11 | 38 | 0d |  | start no earlier than 2023-09-11 |
| 40 | 5.1.3.5 | Book flights |  | 1d | 2023-09-12 | 2023-09-12 | 39 | 0d |  |  |
| 41 | 5.1.3.6 | Flight booked | milestone | 0d | 2023-09-12 | 2023-09-12 | 40 | 0d |  |  |
| 42 | 5.2 | **Venues** |  | 9d | 2023-08-15 | 2023-08-25 |  | 13d |  |  |
| 43 | 5.2.1 | Liaise with local contacts re: venues |  | 5d | 2023-08-15 | 2023-08-21 | 32 | 13d | 0d |  |
| 44 | 5.2.2 | **Create venue shortlist** |  | 1d | 2023-08-22 | 2023-08-22 |  | 13d |  |  |
| 45 | 5.2.2.1 | Send shortlist to training manager |  | 1d | 2023-08-22 | 2023-08-22 | 43 | 13d | 0d |  |
| 46 | 5.2.3 | Get budget approval |  | 3d | 2023-08-23 | 2023-08-25 | 45 | 13d | 0d |  |
| 47 | 5.2.4 | Book venue | milestone | 0d | 2023-08-25 | 2023-08-25 | 46 | 13d | 0d |  |
| 48 | 5.3 | **Organise equipment** |  | 5d | 2023-08-21 | 2023-08-25 |  | 0d |  |  |
| 49 | 5.3.1 | **Source laptops for all trainers** |  | 5d | 2023-08-21 | 2023-08-25 |  |  |  |  |
| 50 | 5.3.1.1 | Obtain laptop specifications | manual | 1d | 2023-08-21 | 2023-08-21 |  |  |  |  |

| ID | WBS | Task | Type | Duration | Start | Finish | Predecessors | Total slack | Constraint |
| --- | --- | --- | --- | --- | --- | --- | --- | --- | --- |
| 51 | 5.4 | **Travel and Accommodation** |  | 11d | 2023-08-28 | 2023-09-12 |  | 4d |  |
| 52 | 5.4.1 | Research local hotels |  | 7d | 2023-08-28 | 2023-09-06 | 47 | 13d |  |
| 53 | 5.4.2 | **Create hotel shortlist** |  | 5d | 2023-09-01 | 2023-09-08 |  | 0d |  |
| 54 | 5.4.2.1 | Send shortlist to training manager | manual | 1d | 2023-09-01 | 2023-09-01 |  |  | start no earlier than 2023-09-01 |
| 55 | 5.4.2.2 | Get budget approval |  | 4d | 2023-09-05 | 2023-09-08 | 54 | 0d |  |
| 56 | 5.4.3 | Book hotel |  | 1d | 2023-09-11 | 2023-09-11 | 55 | 0d |  |
| 57 | 5.4.4 | Hotel booked | milestone | 0d | 2023-09-11 | 2023-09-11 | 56 | 0d | start no earlier than 2023-09-11 |
| 58 | 5.4.5 | Book flights |  | 1d | 2023-09-12 | 2023-09-12 | 57 | 0d |  |
| 59 | 5.4.6 | Flight booked | milestone | 0d | 2023-09-12 | 2023-09-12 | 58 | 0d |  |
| 60 | 5.5 | **Expenses** |  | 11d | 2023-09-11 | 2023-09-25 |  | 0d |  |
| 61 | 5.5.1 | Approve budget |  | 2d | 2023-09-13 | 2023-09-14 | 59, 41 | 0d |  |
| 62 | 5.5.2 | Organise company credit card |  | 7d | 2023-09-15 | 2023-09-25 | 61 | 0d |  |
| 63 | 5.5.3 | Print out expense forms |  | 1d | 2023-09-11 | 2023-09-11 | 55, 37 | 10d |  |
