# Training Rollout Initiative and Plan

Schedule from MS Project, 2022-09-30 to 2023-05-09.

## Calendars

- Standard: Mon-Fri 08:00-12:00, 13:00-17:00; Sat-Sun off.

## Schedule

| ID | WBS | Task | Type | Duration | Start | Finish | Predecessors | Total slack | Free slack |
| --- | --- | --- | --- | --- | --- | --- | --- | --- | --- |
| 1 | 1 | **TRIP - Stage 1 - Project Planning** |  | 19d | 2022-09-30 | 2022-10-26 |  | 0d |  |
| 2 | 1.1 | Define project objectives and describe mission statement |  | 2d | 2022-09-30 | 2022-10-03 |  | 142d | 0d |
| 3 | 1.2 | Ensure total participation by training team support staff |  | 1d | 2022-09-30 | 2022-09-30 |  | 0d |  |
| 4 | 1.3 | **Identify Departments or End-User Community to be Trained** |  | 7d | 2022-10-03 | 2022-10-11 |  | 0d |  |
| 5 | 1.3.1 | Create list of target departments |  | 1d | 2022-10-04 | 2022-10-04 | 2 | 142d | 0d |
| 6 | 1.3.2 | Perform departmental training needs analysis |  | 7d | 2022-10-03 | 2022-10-11 | 3 | 0d |  |
| 7 | 1.3.3 | Compile results and present findings to training coordinator |  | 2d | 2022-10-06 | 2022-10-07 | 6FS-4d | 0d |  |
| 8 | 1.3.4 | Prioritize training delivery according to critical need |  | 2d | 2022-10-10 | 2022-10-11 | 7 | 0d |  |
| 9 | 1.3.5 | Inform department heads of the training initiative |  | 2d | 2022-10-05 | 2022-10-06 | 5 | 152.5d |  |
| 10 | 1.3.6 | Determine if training can be done in-house or outsourced |  | 1.5d | 2022-10-05 | 2022-10-06 | 5 | 142d | 0d |
| 11 | 1.4 | **Seek Input from Training Vendor** |  | 11d | 2022-10-06 | 2022-10-21 |  | 142d |  |
| 12 | 1.4.1 | Define vendor deliverables - can they meet our needs? |  | 1d | 2022-10-06 | 2022-10-07 | 10 | 142d | 0d |
| 13 | 1.4.2 | Obtain vendor commitment to training rollout schedule |  | 3d | 2022-10-07 | 2022-10-12 | 12 | 142d | 0d |
| 14 | 1.4.3 | Review and customize training material |  | 7d | 2022-10-12 | 2022-10-21 | 12, 13 | 142d |  |
| 15 | 1.4.4 | Obtain approval for purchase orders to cover vendor invoices |  | 2d | 2022-10-12 | 2022-10-14 | 13 | 147d |  |
| 16 | 1.5 | **Perform End-User Skill Assessment** |  | 11d | 2022-10-12 | 2022-10-26 |  | 0d |  |
| 17 | 1.5.1 | Create a list of training recipients by department |  | 2d | 2022-10-12 | 2022-10-13 | 8 | 0d |  |
| 18 | 1.5.2 | Send skill assessment forms to department heads |  | 2d | 2022-10-14 | 2022-10-17 | 17 | 0d |  |
| 19 | 1.5.3 | Collect and compile results by department |  | 5d | 2022-10-18 | 2022-10-24 | 18 | 0d |  |
| 20 | 1.5.4 | Initiate end-user placement matrix |  | 3d | 2022-10-21 | 2022-10-25 | 19FS-2d | 0d |  |
| 21 | 1.5.5 | Finalize project budget |  | 2d | 2022-10-25 | 2022-10-26 | 19 | 138.5d | 0d |
| 22 | 1.6 | Stage 1 - TRIP - End project initiation | milestone | 0d | 2022-10-26 | 2022-10-26 | 21 | 138.5d |  |
| 23 | 2 | **TRIP - Stage 2 - Project Commencement** |  | 14d | 2022-10-26 | 2022-11-14 |  | 0d |  |
| 24 | 2.1 | **Prepare Rollout Schedule and Create Awareness** |  | 12d | 2022-10-26 | 2022-11-10 |  | 0d |  |
| 25 | 2.1.1 | Determine course dates, start and end times, and locations |  | 3d | 2022-10-26 | 2022-10-28 | 20 | 0d |  |
| 26 | 2.1.2 | Post course outlines and schedule on corporate intranet |  | 1d | 2022-10-31 | 2022-11-01 | 25FS+0.5d | 130d | 0d |
| 27 | 2.1.3 | Establish support through help desk for post-training questions |  | 1d | 2022-10-31 | 2022-10-31 | 25 | 135.5d |  |
| 28 | 2.1.4 | Reserve training rooms |  | 1d | 2022-10-31 | 2022-10-31 | 25 | 135.5d |  |
| 29 | 2.1.5 | Coordinate with information technology team for optimal workstation and equipment performance |  | 1d | 2022-11-01 | 2022-11-02 | 26 | 134d |  |
| 30 | 2.1.6 | Order training manuals and necessary material |  | 7d | 2022-10-31 | 2022-11-08 | 25 | 129.5d |  |

Notes:
- 1: Assumptions: / ·Software will be rolled out to participant's workstations during training. / ·HR and training management has given their approval and allocated the funds and budget for this project. / ·All necessary compliance and regulatory issues have been addressed.
- 2: List the goals and desired outcomes of this training effort.
- 3: Commit to goals and objectives through agreement, consensus, and participation of all staff members. Training can only be successful if it is a team effort driven by focusing on deliverables and desired outcomes.
- 6: It is important to identify training needs before trying to implement any training solutions. A training needs analysis (TNA) is a systematic exploration of the way things are and the way they should be; the TNA will effectively target your training and development efforts and will help ensure that training interventions are well focused.
- 9: Department heads, in turn, inform their own staff that training will be offered.
- 11: Can be skipped if instructors and training are done in-house.
- 16: Optimal results begin with assessments of professional skills that identify gaps, and their causes that prevent an organization from achieving its highest goals.
- 18: Department heads, in turn, request that their own staff complete and return the skill assessment forms.
- 20: Use the matrix to place each user in the proper training session.
- 23: Assumption: / Training is done in-house; if training is outsourced, a reference to vendor participation is made.

| ID | WBS | Task | Type | Duration | Start | Finish | Predecessors | Total slack | Free slack | Constraint |
| --- | --- | --- | --- | --- | --- | --- | --- | --- | --- | --- |
| 31 | 2.1.7 | **Marketing Strategy** |  | 9d | 2022-10-31 | 2022-11-10 |  | 0d |  |  |
| 32 | 2.1.7.1 | Order promotional material |  | 7d | 2022-10-31 | 2022-11-08 | 25 | 0d |  |  |
| 33 | 2.1.7.2 | Create posters and place them in high-traffic areas |  | 4d | 2022-11-07 | 2022-11-10 | 32FS-2d | 0d |  |  |
| 34 | 2.1.7.3 | E-mail invitation to participants |  | 1d | 2022-11-07 | 2022-11-07 | 33SS | 129.5d | 0d |  |
| 35 | 2.1.7.4 | Arrange for catering of meals and refreshments |  | 1d | 2022-11-08 | 2022-11-08 | 34 | 129.5d |  |  |
| 36 | 2.2 | **Training Sessions Registration** |  | 5d | 2022-11-07 | 2022-11-11 |  | 0d |  |  |
| 37 | 2.2.1 | Enroll users who registered via corporate intranet |  | 2d | 2022-11-07 | 2022-11-08 | 33SS | 0d |  |  |
| 38 | 2.2.2 | Send out confirmations to these registration |  | 1d | 2022-11-09 | 2022-11-09 | 37 | 2d |  |  |
| 39 | 2.2.3 | Send out prework requirements |  | 2d | 2022-11-07 | 2022-11-08 | 37SS | 3d |  |  |
| 40 | 2.2.4 | Monitor cancellations and late requests for training |  | 1d | 2022-11-11 | 2022-11-11 | 37FS+2d | 0d |  |  |
| 41 | 2.3 | **Schedule Instructors** |  | 3d | 2022-11-01 | 2022-11-04 |  | 132d |  |  |
| 42 | 2.3.1 | In-house instructors |  | 1d | 2022-11-01 | 2022-11-02 | 26 | 134d |  |  |
| 43 | 2.3.2 | Outsourced instructors |  | 3d | 2022-11-01 | 2022-11-04 | 26 | 132d |  |  |
| 44 | 2.4 | **Courseware Evaluations** |  | 3d | 2022-11-03 | 2022-11-08 |  | 130d |  |  |
| 45 | 2.4.1 | Reuse or build an end-user course evaluation form (online or paper) |  | 2d | 2022-11-03 | 2022-11-07 | 26FS+2d | 131d |  |  |
| 46 | 2.4.2 | Reuse or build an special feedback form for instructors |  | 2d | 2022-11-04 | 2022-11-08 | 26FS+3d | 130d |  |  |
| 47 | 2.5 | Stage 2 - TRIP - End project commencement | milestone | 0d | 2022-11-14 | 2022-11-14 | 36FS+1d | 0d |  |  |
| 48 | 3 | **TRIP - Stage 3 - Project Implementation and Control** |  | 13.5d | 2022-11-17 | 2022-12-06 |  | 0d |  |  |
| 49 | 3.1 | Conduct training and track attendance |  | 10d | 2022-11-17 | 2022-11-30 | 47FS+2d | 0d |  |  |
| 50 | 3.2 | **Daily Conference Call (Hold Daily Call to Address Issues)** |  | 9.25d | 2022-11-17 | 2022-11-30 |  | 114.25d |  |  |
| 51 | 3.2.1 | Call 1 |  | 1h | 2022-11-17 | 2022-11-17 | 49SS | 114.25d | 0d | start no earlier than 2020-11-14 |
| 52 | 3.2.2 | Call 2 |  | 1h | 2022-11-18 | 2022-11-18 | 51FS+1d | 114.25d | 0d | start no earlier than 2020-11-17 |
| 53 | 3.2.3 | Call 3 |  | 1h | 2022-11-21 | 2022-11-21 | 52FS+1d | 114.25d | 0d | start no earlier than 2020-11-20 |
| 54 | 3.2.4 | Call 4 |  | 1h | 2022-11-22 | 2022-11-22 | 53FS+1d | 114.25d | 0d | start no earlier than 2020-11-19 |
| 55 | 3.2.5 | Call 5 |  | 1h | 2022-11-23 | 2022-11-23 | 54FS+1d | 114.25d | 0d | start no earlier than 2020-11-20 |
| 56 | 3.2.6 | Call 6 |  | 1h | 2022-11-24 | 2022-11-24 | 55FS+1d | 114.25d | 0d | start no earlier than 2020-11-21 |
| 57 | 3.2.7 | Call 7 |  | 1h | 2022-11-25 | 2022-11-25 | 56FS+1d | 114.25d | 0d | start no earlier than 2020-11-24 |
| 58 | 3.2.8 | Call 8 |  | 1h | 2022-11-28 | 2022-11-28 | 57FS+1d | 114.25d | 0d | start no earlier than 2020-11-27 |
| 59 | 3.2.9 | Call 9 |  | 1h | 2022-11-29 | 2022-11-29 | 58 | 114.25d | 0d | start no earlier than 2020-11-26 |
| 60 | 3.2.10 | Call 10 |  | 1h | 2022-11-30 | 2022-11-30 | 59FS+1d | 114.25d |  | start no earlier than 2020-11-27 |
| 61 | 3.3 | Collect feedback and compile results |  | 2.5d | 2022-11-29 | 2022-12-01 | 49FS-2d | 0d |  |  |
| 62 | 3.4 | Determine need for make up training |  | 1.5d | 2022-12-01 | 2022-12-02 | 49 | 112d |  |  |
| 63 | 3.5 | Update department heads with training results |  | 2d | 2022-12-01 | 2022-12-05 | 61 | 0d |  |  |
| 64 | 3.6 | Issue certificates of completion to participants |  | 1d | 2022-12-05 | 2022-12-06 | 63 | 0d |  |  |
| 65 | 3.7 | Stage 3 - TRIP - End project implementation and control | milestone | 0d | 2022-12-06 | 2022-12-06 | 64 | 0d |  |  |

Notes:
- 32: Promotional material can include custom notepads, pens, mouse pads, etc.
- 37: Enrollment and confirmations can be fully automated if done through corporate intranet.
- 39: After skills assessments are collected, there may be a need to contact individual users and ask them to perform some prep work or prework prior to their participation in training. This is to ensure that such users have satisfied the necessary prerequisites for enrollment without the need to go for separate training. These are handled on a case-by-case basis.
- 40: There may be a need for makeup sessions if a sufficient number of absent users require them.
- 46: This form is usually used to collect feedback from instructors on the quality of material, room setup, workstation performance, specific user issues, specific software issues and specific vendor issues (if applicable).
- 48: Assumption: / The rollout will take place over two weeks (ten business days), to train 70-80 users. Each session can have up to eight users for optimal learning. / This is the start of hands-on training.
- 50: The Daily Conference Call involves the instructors, vendor staff (if any) and the training coordinator. The purpose of the call is to ensure proper communication of the progress of training, as well as the escalation of any problems, software, hardware, or other issues. These conference calls are held at the end of each training day for the duration of the training rollout. They are kept to 60 minutes at most and can be completed in a shorter amount of time. / To adjust the frequency of these conference calls, using the right mouse button (right-click), click the Daily Conference Call cell you want to modify and then click Task Information; then you can modify the parameters to suit your needs. Please note that in this example, the training rollout was set to take place over a 10-day period, with a conference call at the end of each day. / The Daily Conference Calls have a constraint of Start No Earlier Than so that they can be performed at the end of each training day. Also note the dependency relationships that ensure that these tasks do take place at the end of each training day.
- 51: Conference call performed at the end of the training day. Right-click this task and click Task Information to adjust the various options.
- 52: Conference call performed at the end of the training day. Right-click this task and click Task Information to adjust the various options.
- 53: Conference call performed at the end of the training day. Right-click this task and click Task Information to adjust the various options.
- 54: Conference call performed at the end of the training day. Right-click this task and click Task Information to adjust the various options.
- 55: Conference call performed at the end of the training day. Right-click this task and click Task Information to adjust the various options.
- 56: Conference call performed at the end of the training day. Right-click this task and click Task Information to adjust the various options.
- 57: Conference call performed at the end of the training day. Right-click this task and click Task Information to adjust the various options.
- 58: Conference call performed at the end of the training day. Right-click this task and click Task Information to adjust the various options.
- 59: Conference call performed at the end of the training day. Right-click this task and click Task Information to adjust the various options.
- 60: Conference call performed at the end of the training day. Right-click this task and click Task Information to adjust the various options.
- 61: Course evaluations can be fully automated so that users complete an online form at the end of each session; this makes compiling results much easier. However, allow more time if evaluations are completed via paper forms.
- 64: When the rollout is complete, certificates of completion are sent to department heads; they are in turn given out to the participants based on specific departmental procedures (such as updating employment records or send to regulatory agencies for required compliance).

| ID | WBS | Task | Type | Duration | Start | Finish | Predecessors | Total slack |
| --- | --- | --- | --- | --- | --- | --- | --- | --- |
| 66 | 4 | **TRIP - Stage 4 - Project Close Out and Conclusion** |  | 108d | 2022-12-08 | 2023-05-09 |  | 0d |
| 67 | 4.1 | **Performance measurement through post-training review of deliverables** |  | 8d | 2022-12-08 | 2022-12-20 |  | 0d |
| 68 | 4.1.1 | Discuss evaluations, results, and process improvements with training team support staff |  | 1d | 2022-12-08 | 2022-12-09 | 65FS+2d | 0d |
| 69 | 4.1.2 | Create a list of best practices and FAQ for future training endeavors |  | 3d | 2022-12-09 | 2022-12-14 | 68 | 0d |
| 70 | 4.1.3 | Discuss results with vendor for any improvements |  | 2d | 2022-12-14 | 2022-12-16 | 68, 69 | 0d |
| 71 | 4.1.4 | Identify issues that were problems and improve them |  | 2d | 2022-12-16 | 2022-12-20 | 68, 69, 70 | 0d |
| 72 | 4.2 | **Conduct Return On Investment (ROI) Research** |  | 10d | 2023-04-25 | 2023-05-09 |  | 0d |
| 73 | 4.2.1 | Send ROI forms to participants and department heads |  | 2d | 2023-04-25 | 2023-04-27 | 67FS+90d | 0d |
| 74 | 4.2.2 | Measure ROI according to established parameters |  | 5d | 2023-04-26 | 2023-05-03 | 73FS-1d | 0d |
| 75 | 4.2.3 | Compile results and present findings to department heads and HR and training managers |  | 4d | 2023-05-03 | 2023-05-09 | 74 | 0d |
| 76 | 4.3 | Stage 4 - TRIP - End project close out and conclusion | milestone | 0d | 2023-05-09 | 2023-05-09 | 75 | 0d |
| 77 | 5 | Party!! For training team support staff (and vendor staff) |  | 1d | 2022-12-06 | 2022-12-07 | 65 | 109d |

Notes:
- 72: Typically done three months after the completion of the training rollout.
- 73: The goal is to determine if they are using and applying what they learned. A standard training ROI form is used.
