# New Product Launch

Schedule from MS Project, 2005-03-01 to 2005-03-28.

## Calendars

- Standard: Mon-Fri 09:00-13:00, 14:00-18:00; Sat-Sun off.

## Resources

| Resource |
| --- |
| Engineering |
| Manufacturing |
| Marketing |
| Sales |
| Product Support |
| Field Service |
| Product Manager |

## Schedule

| ID | WBS | Task | Type | Duration | Start | Finish | Predecessors | Total slack | Resources | Work |
| --- | --- | --- | --- | --- | --- | --- | --- | --- | --- | --- |
| 1 | 1 | Read the note for an explanation of the purpose of this template | milestone | 0d | 2005-03-01 | 2005-03-01 |  | 0d |  |  |
| 2 | 2 | **Phase 1 - Planning** |  | 6.86d? | 2005-03-01 | 2005-03-09 |  | 0d |  | 103.95h |
| 3 | 2.1 | Identify the launch team |  | 0.86d? | 2005-03-01 | 2005-03-01 | 1 | 0d | Engineering; Manufacturing; Marketing; Sales; Product Support; Field Service; Product Manager | 47.95h |
| 4 | 2.2 | Determine sales objectives |  | 1d? | 2005-03-01 | 2005-03-02 | 3 | 0d | Product Manager | 8h |
| 5 | 2.3 | Define launch goals (launch timing and publicity objectives) |  | 1d? | 2005-03-02 | 2005-03-03 | 4 | 0d | Product Manager | 8h |
| 6 | 2.4 | **Determine partners (if needed)** |  | 1d? | 2005-03-03 | 2005-03-04 |  | 0d |  | 24h |
| 7 | 2.4.1 | Identify channel partners |  | 1d? | 2005-03-03 | 2005-03-04 | 5 | 0d | Marketing | 8h |
| 8 | 2.4.2 | Identify retail partners |  | 1d? | 2005-03-03 | 2005-03-04 | 5 | 0d | Marketing | 8h |
| 9 | 2.4.3 | Identify online opportunities |  | 1d? | 2005-03-03 | 2005-03-04 | 5 | 0d | Marketing | 8h |
| 10 | 2.5 | **Establish Launch Budget** |  | 2d? | 2005-03-04 | 2005-03-08 |  | 0d |  | 16h |
| 11 | 2.5.1 | Identify budget requirements |  | 1d? | 2005-03-04 | 2005-03-07 | 7, 8, 9 | 0d | Product Manager | 8h |
| 12 | 2.5.2 | Obtain launch budget approval |  | 1d? | 2005-03-07 | 2005-03-08 | 11 | 0d | Product Manager | 8h |
| 13 | 2.6 | Planning COMPLETE |  | 1d? | 2005-03-08 | 2005-03-09 | 12 | 0d |  |  |
| 14 | 3 | **Phase 2 - Initiation** |  | 6d? | 2005-03-09 | 2005-03-17 |  | 0d |  | 152h |
| 15 | 3.1 | Kickoff product launch |  | 1d? | 2005-03-09 | 2005-03-10 | 13 | 0d | Product Manager | 8h |
| 16 | 3.2 | **Marketing** |  | 3d? | 2005-03-10 | 2005-03-15 |  | 0d |  | 48h |
| 17 | 3.2.1 | Define creative brief |  | 1d? | 2005-03-10 | 2005-03-11 | 15 | 0d | Product Manager | 8h |
| 18 | 3.2.2 | **Prepare Messaging Framework** |  | 1d? | 2005-03-11 | 2005-03-14 |  | 0d |  | 40h |
| 19 | 3.2.2.1 | Review current literature and plan new requirements |  | 1d? | 2005-03-11 | 2005-03-14 | 17 | 0d | Marketing | 8h |
| 20 | 3.2.2.2 | Define press release requirements |  | 1d? | 2005-03-11 | 2005-03-14 | 17 | 0d | Marketing | 8h |
| 21 | 3.2.2.3 | Define product specification literature |  | 1d? | 2005-03-11 | 2005-03-14 | 17 | 0d | Marketing | 8h |
| 22 | 3.2.2.4 | Define sales presentations |  | 1d? | 2005-03-11 | 2005-03-14 | 17 | 0d | Marketing | 8h |
| 23 | 3.2.2.5 | Define internal communication needs |  | 1d? | 2005-03-11 | 2005-03-14 | 17 | 0d | Marketing | 8h |
| 24 | 3.2.3 | Messaging Framework COMPLETE |  | 1d? | 2005-03-14 | 2005-03-15 | 19, 20, 21, 22, 23 | 0d |  |  |

Notes:
- 1: This template will help the user define and manage the key components included in a strong product launch plan: Clearly defined sales objectives; assured sales channel readiness; promotional functions in place (public relations, marketing, and advertising); and resources to track, monitor, and account for execution. / A product launch is typically performed under the guidance and direction of the marketing organization and the product manager for the product. All other departments will play a supporting role in the launch plan and schedule. For this reason, the majority of the activities in this template will focus on marketing activities. Additional plans will be required for the work performed in other departments to prepare the product for launch.
- 15: This task typically takes the form of a meeting with all key players. The purpose of the meeting is to share the product launch goals and sales objectives, and to provide the departments with enough information to create their department plans for the launch.

| ID | WBS | Task | Type | Duration | Start | Finish | Predecessors | Total slack | Free slack | Resources | Work |
| --- | --- | --- | --- | --- | --- | --- | --- | --- | --- | --- | --- |
| 25 | 3.3 | **Engineering** |  | 1d? | 2005-03-10 | 2005-03-11 |  | 2d |  |  | 8h |
| 26 | 3.3.1 | Align product release timing with marketing plan |  | 1d? | 2005-03-10 | 2005-03-11 | 15 | 2d |  | Engineering | 8h |
| 27 | 3.4 | **Manufacturing** |  | 1d? | 2005-03-10 | 2005-03-11 |  | 2d |  |  | 8h |
| 28 | 3.4.1 | Prepare for volume manufacturing according to sales goals |  | 1d? | 2005-03-10 | 2005-03-11 | 15 | 2d |  | Manufacturing | 8h |
| 29 | 3.5 | **Sales** |  | 1d? | 2005-03-10 | 2005-03-11 |  | 2d |  |  | 8h |
| 30 | 3.5.1 | Plan sales force staffing and training to support sales goals |  | 1d? | 2005-03-10 | 2005-03-11 | 15 | 2d |  | Sales | 8h |
| 31 | 3.6 | **Product Support** |  | 1d? | 2005-03-10 | 2005-03-11 |  | 2d |  |  | 8h |
| 32 | 3.6.1 | Plan team staffing to support sales goals |  | 1d? | 2005-03-10 | 2005-03-11 | 15 | 2d |  | Product Support | 8h |
| 33 | 3.7 | **Field Service** |  | 1d? | 2005-03-10 | 2005-03-11 |  | 2d |  |  | 8h |
| 34 | 3.7.1 | Plan field service staffing to support sales goals |  | 1d? | 2005-03-10 | 2005-03-11 | 15 | 2d |  | Field Service | 8h |
| 35 | 3.8 | Supply updated requirements and budgets based on departmental plans |  | 1d? | 2005-03-15 | 2005-03-16 | 34, 32, 30, 28, 26, 24 | 0d |  | Engineering; Manufacturing; Marketing; Sales; Product Support; Field Service | 48h |
| 36 | 3.9 | Obtain approval for updated plans and budgets. |  | 1d? | 2005-03-16 | 2005-03-17 | 35 | 0d |  | Product Manager | 8h |
| 37 | 3.10 | Initiation Phase COMPLETE | milestone | 0d | 2005-03-17 | 2005-03-17 | 36 | 0d |  |  |  |
| 38 | 4 | **Phase 3 - Execution** |  | 4d? | 2005-03-17 | 2005-03-23 |  | 0d |  |  | 136h |
| 39 | 4.1 | **Marketing** |  | 4d? | 2005-03-17 | 2005-03-23 |  | 0d |  |  | 72h |
| 40 | 4.1.1 | Evaluate market and refine messaging |  | 1d? | 2005-03-17 | 2005-03-18 | 37 | 0d |  | Marketing | 8h |
| 41 | 4.1.2 | Design and order final packaging |  | 1d? | 2005-03-18 | 2005-03-21 | 40 | 0d |  | Marketing | 8h |
| 42 | 4.1.3 | Create press releases |  | 1d? | 2005-03-18 | 2005-03-21 | 40 | 0d |  | Marketing | 8h |
| 43 | 4.1.4 | Create product specification literature |  | 1d? | 2005-03-18 | 2005-03-21 | 40 | 0d |  | Marketing | 8h |
| 44 | 4.1.5 | Create sales presentations |  | 1d? | 2005-03-18 | 2005-03-21 | 40 | 0d |  | Marketing | 8h |
| 45 | 4.1.6 | Communicate product launch details to internal organization |  | 1d? | 2005-03-21 | 2005-03-22 | 40, 41, 42, 43, 44 | 0d |  | Marketing | 8h |
| 46 | 4.1.7 | Create sales, field, and product support training |  | 1d? | 2005-03-22 | 2005-03-23 | 45 | 0d |  | Marketing | 8h |
| 47 | 4.1.8 | Update product forecasts based on market feedback and analysis |  | 1d? | 2005-03-18 | 2005-03-21 | 40 | 1d | 0d | Marketing | 8h |
| 48 | 4.1.9 | Update launch plan based on forecast |  | 1d? | 2005-03-21 | 2005-03-22 | 47 | 1d |  | Marketing | 8h |

Notes:
- 26: The engineering department will have its own set of plans to complete the development of the product. Their involvement in this plan is for purposes of coordination and alignment regarding timing of the launch, product specifications, and subject matter expertise on the capabilities and features of the product.
- 28: The manufacturing department will have its own set of plans to prepare and product the product. Their involvement in this plan is for purposes of coordination and alignment regarding timing of the launch, manufacturing requirements, and quality requirements for the completed product.
- 30: The sales department involvement in this plan is for purposes of coordination and alignment regarding timing of the launch, training of the sales team, and staffing requirements.
- 32: Product support is involved in the launch plan to ensure that they understand the timing of the launch and are prepared to support it with a trained staff than can meet the sales objectives.
- 34: Field service involvement is similar to product support. They are involved in the launch plan to ensure that they understand the timing of the launch and are prepared to support it with a trained staff than can meet the sales objectives.
- 40: Market receptivity is evaluated by key customer feedback, focus groups, test markets, or beta tests.

| ID | WBS | Task | Type | Duration | Start | Finish | Predecessors | Total slack | Free slack | Resources | Work |
| --- | --- | --- | --- | --- | --- | --- | --- | --- | --- | --- | --- |
| 49 | 4.2 | **Engineering** |  | 1d? | 2005-03-17 | 2005-03-18 |  | 3d |  |  | 8h |
| 50 | 4.2.1 | Complete and test product |  | 1d? | 2005-03-17 | 2005-03-18 | 37 | 3d |  | Engineering | 8h |
| 51 | 4.3 | **Manufacturing** |  | 1d? | 2005-03-17 | 2005-03-18 |  | 3d |  |  | 16h |
| 52 | 4.3.1 | Create prototype products |  | 1d? | 2005-03-17 | 2005-03-18 | 37 | 3d |  | Manufacturing | 8h |
| 53 | 4.3.2 | Prepare pipeline |  | 1d? | 2005-03-17 | 2005-03-18 | 37 | 3d |  | Manufacturing | 8h |
| 54 | 4.4 | **Sales** |  | 1d? | 2005-03-17 | 2005-03-18 |  | 3d |  |  | 8h |
| 55 | 4.4.1 | Establish sales channels |  | 1d? | 2005-03-17 | 2005-03-18 | 37 | 3d |  | Sales | 8h |
| 56 | 4.5 | **Product Support** |  | 1d? | 2005-03-17 | 2005-03-18 |  | 3d |  |  | 8h |
| 57 | 4.5.1 | Establish product support mechanisms |  | 1d? | 2005-03-17 | 2005-03-18 | 37 | 3d |  | Product Support | 8h |
| 58 | 4.6 | **Field Service** |  | 1d? | 2005-03-17 | 2005-03-18 |  | 3d |  |  | 8h |
| 59 | 4.6.1 | Establish field service organizations |  | 1d? | 2005-03-17 | 2005-03-18 | 37 | 3d |  | Field Service | 8h |
| 60 | 4.7 | **Prepare for Manufacturing Release** |  | 2d? | 2005-03-17 | 2005-03-21 |  | 2d |  |  | 16h |
| 61 | 4.7.1 | Implement change control |  | 1d? | 2005-03-17 | 2005-03-18 | 37 | 2d | 0d | Product Manager | 8h |
| 62 | 4.7.2 | Finalize support policy |  | 1d? | 2005-03-18 | 2005-03-21 | 61 | 2d |  | Product Manager | 8h |
| 63 | 4.8 | Execution Phase COMPLETE | milestone | 0d | 2005-03-23 | 2005-03-23 | 62, 61, 59, 57, 55, 53, 52, 50, 48, 46 | 0d |  |  |  |
| 64 | 5 | **Phase 4 - Release To Manufacture** |  | 3d? | 2005-03-23 | 2005-03-28 |  | 0d |  |  | 104h |
| 65 | 5.1 | **Manufacturing** |  | 2d? | 2005-03-23 | 2005-03-25 |  | 0d |  |  | 24h |
| 66 | 5.1.1 | Certify product |  | 1d? | 2005-03-23 | 2005-03-24 | 63 | 0d |  | Manufacturing; Product Manager | 16h |
| 67 | 5.1.2 | Manufacture the volume of product planned to meet sales objectives. |  | 1d? | 2005-03-24 | 2005-03-25 | 66 | 0d |  | Manufacturing | 8h |
| 68 | 5.2 | **Sales** |  | 1d? | 2005-03-23 | 2005-03-24 |  | 1d |  |  | 8h |
| 69 | 5.2.1 | Hire and train sales staff |  | 1d? | 2005-03-23 | 2005-03-24 | 63 | 1d |  | Sales | 8h |
| 70 | 5.3 | **Product Support** |  | 1d? | 2005-03-23 | 2005-03-24 |  | 1d |  |  | 8h |
| 71 | 5.3.1 | Hire and train product support personnel |  | 1d? | 2005-03-23 | 2005-03-24 | 63 | 1d |  | Product Support | 8h |
| 72 | 5.4 | **Field Service** |  | 1d? | 2005-03-23 | 2005-03-24 |  | 1d |  |  | 8h |
| 73 | 5.4.1 | Hire and train field service personnel |  | 1d? | 2005-03-23 | 2005-03-24 | 63 | 1d |  | Field Service | 8h |

Notes:
- 50: Product performance is evaluated through testing and qualification.
- 52: Production processes are developed initially using pilot production lines and later using actual production lines.
- 53: The distribution pipeline is filled with the appropriate level of product.
- 61: All product documentation has been completed and finalized and the product is under configuration control. User documentation, operating manuals, and maintenance instructions have also been completed.
- 66: The product and the production process have been qualified or validated and all regulatory approvals and/or certifications have been obtained.

| ID | WBS | Task | Type | Duration | Start | Finish | Predecessors | Total slack | Resources | Work |
| --- | --- | --- | --- | --- | --- | --- | --- | --- | --- | --- |
| 74 | 5.5 | **Final Quality Review** |  | 1d? | 2005-03-25 | 2005-03-28 |  | 0d |  | 56h |
| 75 | 5.5.1 | Conduct final quality review |  | 1d? | 2005-03-25 | 2005-03-28 | 73, 71, 69, 67 | 0d | Engineering; Manufacturing; Marketing; Sales; Product Support; Field Service; Product Manager | 56h |
| 76 | 5.5.2 | Product Release Information COMPLETE | milestone | 0d | 2005-03-28 | 2005-03-28 | 75 | 0d |  |  |
| 77 | 5.5.3 | Needed materials are on order or in stock. | milestone | 0d | 2005-03-28 | 2005-03-28 | 75 | 0d |  |  |
| 78 | 5.5.4 | Literature COMPLETE | milestone | 0d | 2005-03-28 | 2005-03-28 | 75 | 0d |  |  |
| 79 | 5.5.5 | Training COMPLETE | milestone | 0d | 2005-03-28 | 2005-03-28 | 75 | 0d |  |  |
| 80 | 5.6 | Launch Product | milestone | 0d | 2005-03-28 | 2005-03-28 | 79, 78, 77, 76, 75 | 0d |  |  |

Notes:
- 78: Advertising, product brochures, marketing materials, press releases, and Web pages have been prepared and are ready to distribute at the appropriate time.
- 79: Sales, service, and support personnel have been trained or a phased training program is underway.
- 80: The new product is launched when service, sales, and distribution channels are ready.
