# Project 2016 Advanced Charity Event (original)

Schedule from MS Project, 2023-06-14 to 2023-09-14.
Simon Sez IT

## Calendars

- Charity Fundraiser Calendar: Mon-Fri 08:00-12:00, 13:00-17:00; Sat-Sun off.

## Resources

| Resource | Group |
| --- | --- |
| Event Director | Steering Committee |
| Publicity Officer | Steering Committee |
| Gala Dinner PM | Steering Committee |
| Fashion Show PM | Steering Committee |
| Sports Day PM | Steering Committee |
| Venue Manager | Steering Committee |
| Volunteer Manager |  |
| Volunteer |  |

## Schedule

| ID | WBS | Task | Type | Duration | Start | Finish | Predecessors | Total slack | Free slack | Constraint | Resources | Work |
| --- | --- | --- | --- | --- | --- | --- | --- | --- | --- | --- | --- | --- |
| 1 | 1 | **Planning** |  | 67d | 2023-06-14 | 2023-09-14 |  | 0d |  |  |  | 764h |
| 2 | 1.1 | **Programme Meetings** |  | 38d | 2023-06-14 | 2023-08-04 |  | 3d |  |  |  | 96h |
| 3 | 1.1.1 | Startup Meeting |  | 1d | 2023-06-14 | 2023-06-14 |  | 3d | 0d |  | Event Director [50%]; Venue Manager [50%]; Publicity Officer [50%]; Sports Day PM [50%]; Fashion Show PM [50%]; Gala Dinner PM [50%] | 24h |
| 4 | 1.1.2 | Meeting 1 |  | 1d | 2023-06-29 | 2023-06-29 | 8, 23, 37 | 3d | 0d |  | Event Director [50%]; Venue Manager [50%]; Publicity Officer [50%]; Sports Day PM [50%]; Fashion Show PM [50%]; Gala Dinner PM [50%] | 24h |
| 5 | 1.1.3 | Meeting 2 |  | 1d | 2023-07-14 | 2023-07-14 | 9, 24, 50, 38 | 3d | 0d |  | Event Director [50%]; Venue Manager [50%]; Publicity Officer [50%]; Sports Day PM [50%]; Fashion Show PM [50%]; Gala Dinner PM [50%] | 24h |
| 6 | 1.1.4 | Meeting 3 |  | 1d | 2023-08-04 | 2023-08-04 | 19, 29, 41 | 3d | 0d |  | Event Director [50%]; Venue Manager [50%]; Publicity Officer [50%]; Sports Day PM [50%]; Fashion Show PM [50%]; Gala Dinner PM [50%] | 24h |
| 7 | 1.2 | **Venue** |  | 65d | 2023-06-15 | 2023-09-13 |  | 0d |  |  |  | 176h |
| 8 | 1.2.1 | Specify Venue Requirements |  | 10d | 2023-06-15 | 2023-06-28 | 3 | 3d | 0d |  | Venue Manager | 80h |
| 9 | 1.2.2 | Prepare Short List of Venues |  | 10d | 2023-06-30 | 2023-07-13 | 4 | 3d | 0d |  | Venue Manager | 80h |
| 10 | 1.2.3 | Book Venue | milestone | 0d | 2023-07-14 | 2023-07-14 | 5 | 3d | 0d |  | Venue Manager |  |
| 11 | 1.2.4 | Vacate Venue |  | 2d | 2023-09-12 | 2023-09-13 | 56, 45, 34 | 0d |  |  | Venue Manager | 16h |
| 12 | 1.3 | **Publicity** |  | 49d | 2023-06-30 | 2023-09-06 |  | 6d |  |  |  | 244h |
| 13 | 1.3.1 | Initial Press Release |  | 10d | 2023-06-30 | 2023-07-13 | 4 | 45d |  |  | Publicity Officer | 80h |
| 14 | 1.3.2 | Detailed Press Release |  | 10d | 2023-07-17 | 2023-07-28 | 5 | 34d |  |  | Publicity Officer | 80h |
| 15 | 1.3.3 | Print Tickets and Invitations |  | 15d | 2023-08-07 | 2023-08-25 | 6 | 14d |  |  | Publicity Officer [20%] | 24h |
| 16 | 1.3.4 | Prepare banners, signs, etc. |  | 15d | 2023-08-17 | 2023-09-06 |  | 0d |  | as late as possible | Publicity Officer [50%] | 60h |
| 17 | 1.4 | **Volunteers** |  | 55d | 2023-06-30 | 2023-09-14 |  | 0d |  |  |  | 248h |
| 18 | 1.4.1 | Setup Register of Volunteers |  | 5d | 2023-06-30 | 2023-07-06 | 4 | 3d | 0d |  | Volunteer Manager | 40h |
| 19 | 1.4.2 | Request and Accept Volunteers |  | 20d | 2023-07-07 | 2023-08-03 | 18 | 3d | 0d |  | Volunteer Manager | 160h |
| 20 | 1.4.3 | Assign Volunteers to Tasks |  | 5d | 2023-08-07 | 2023-08-11 | 6 | 3d | 0d |  | Volunteer Manager | 40h |
| 21 | 1.4.4 | Discharge Volunteers |  | 1d | 2023-09-14 | 2023-09-14 | 11 | 0d |  |  | Volunteer Manager | 8h |
| 22 | 1.5 | **Catering** |  | 22d | 2023-06-15 | 2023-07-14 |  | 8d |  |  |  |  |
| 23 | 1.5.1 | Specify Catering Requirements |  | 5d | 2023-06-15 | 2023-06-21 | 3 | 8d | 5d |  |  |  |
| 24 | 1.5.2 | Prepare Short List of Caterers |  | 10d | 2023-06-30 | 2023-07-13 | 4 | 3d | 0d |  |  |  |
| 25 | 1.5.3 | Book Caterer | milestone | 0d | 2023-07-14 | 2023-07-14 | 5 | 12d | 0d |  |  |  |

| ID | WBS | Task | Duration | Start | Finish | Predecessors | Total slack | Free slack | Constraint | Resources | Work |
| --- | --- | --- | --- | --- | --- | --- | --- | --- | --- | --- | --- |
| 26 | 2 | **Gala Dinner** | 41d | 2023-07-17 | 2023-09-11 |  | 0d |  |  |  | 40h |
| 27 | 2.1 | Obtain licenses | 10d | 2023-07-17 | 2023-07-28 | 10 | 9d | 0d |  |  |  |
| 28 | 2.2 | **Gala Dinner Menu** | 20d | 2023-07-17 | 2023-08-11 |  | 4d |  |  |  |  |
| 29 | 2.2.1 | Prepare Draft Gala Dinner Menu | 5d | 2023-07-17 | 2023-07-21 | 25 | 12d | 9d |  |  |  |
| 30 | 2.2.2 | Finalize Gala Dinner Menu | 5d | 2023-08-07 | 2023-08-11 | 6 | 4d | 0d |  |  |  |
| 31 | 2.3 | Make Bar Arrangements | 5d | 2023-07-31 | 2023-08-04 | 27 | 9d | 5d |  |  |  |
| 32 | 2.4 | Train Gala Dinner Volunteers | 15d | 2023-08-14 | 2023-09-01 | 30, 31, 20 | 4d |  |  |  |  |
| 33 | 2.5 | Prepare Dinner Venue | 1d | 2023-09-08 | 2023-09-08 | 32, 16 | 0d |  | as late as possible | Volunteer [300%]; Gala Dinner PM | 32h |
| 34 | 2.6 | Dinner | 1d | 2023-09-11 | 2023-09-11 | 33, 30, 31 | 0d |  | must start on 2023-09-11 | Gala Dinner PM | 8h |
| 35 | 3 | **Fashion Show** | 63d | 2023-06-15 | 2023-09-11 |  | 0d |  |  |  | 72h |
| 36 | 3.1 | **Contributors** | 62d | 2023-06-15 | 2023-09-08 |  | 0d |  |  |  |  |
| 37 | 3.1.1 | Specify Contributor Requirements | 5d | 2023-06-15 | 2023-06-21 | 3 | 8d | 5d |  |  |  |
| 38 | 3.1.2 | Invite Contrubutors | 10d | 2023-06-30 | 2023-07-13 | 4 | 3d | 0d |  |  |  |
| 39 | 3.1.3 | Manage Contributor Involvement | 30d | 2023-07-31 | 2023-09-08 | 5 | 0d |  | as late as possible |  |  |
| 40 | 3.2 | **Buffet Lunch Menu** | 20d | 2023-07-17 | 2023-08-11 |  | 3d |  |  |  |  |
| 41 | 3.2.1 | Prepare Draft Buffet Lunch Menu | 5d | 2023-07-17 | 2023-07-21 | 25 | 12d | 9d |  |  |  |
| 42 | 3.2.2 | Finalize Buffet Lunch Menu | 5d | 2023-08-07 | 2023-08-11 | 6 | 3d | 0d |  |  |  |
| 43 | 3.3 | Train Fashion Show Volunteers | 15d | 2023-08-14 | 2023-09-01 | 42, 20 | 3d |  |  |  |  |
| 44 | 3.4 | Prepare Fashion Show Venue | 2d | 2023-09-07 | 2023-09-08 | 43, 16 | 0d |  | as late as possible | Volunteer [300%]; Fashion Show PM | 64h |
| 45 | 3.5 | Fashion Show and Buffet Lunch | 1d | 2023-09-11 | 2023-09-11 | 39, 44 | 0d |  | must start on 2023-09-11 | Fashion Show PM | 8h |
| 46 | 4 | **Sports_Day** | 52d | 2023-06-30 | 2023-09-11 |  | 3d |  |  |  | 88h |
| 47 | 4.1 | Perform Risk Assessment | 10d | 2023-07-17 | 2023-07-28 | 10 | 3d | 0d |  |  |  |
| 48 | 4.2 | Obtain Insurance | 10d | 2023-07-31 | 2023-08-11 | 47 | 3d | 0d |  |  |  |
| 49 | 4.3 | **Sports Day Programme of Events** | 21d | 2023-06-30 | 2023-07-28 |  | 3d |  |  |  |  |
| 50 | 4.3.1 | Prepare Draft Sports Day Programme of Events | 10d | 2023-06-30 | 2023-07-13 | 4 | 3d | 0d |  |  |  |
| 51 | 4.3.2 | Finalize Sports Day Programme of Events | 10d | 2023-07-17 | 2023-07-28 | 5 | 13d | 0d |  |  |  |
| 52 | 4.4 | Barbecue Planning and Preparation | 25d | 2023-07-17 | 2023-08-18 | 10 | 15d |  |  |  |  |
| 53 | 4.5 | Print Sports Day Programmes | 10d | 2023-07-31 | 2023-08-11 | 51 | 24d |  |  |  |  |
| 54 | 4.6 | Train Sports Day Volunteers | 15d | 2023-08-14 | 2023-09-01 | 48, 51, 20 | 3d |  |  |  |  |
| 55 | 4.7 | Prepare Sports Day Venue | 2d | 2023-09-07 | 2023-09-08 | 54, 16 | 0d |  | as late as possible | Volunteer [400%]; Sports Day PM | 80h |
| 56 | 4.8 | Sports Day and Barbecue | 1d | 2023-09-11 | 2023-09-11 | 52, 55 | 0d |  | must start on 2023-09-11 | Sports Day PM | 8h |
