# Web Site 01

Schedule from MS Project, 2023-02-01 to 2023-10-20, status date 2023-06-24, costs in $, A marks actual dates.
SimonSezIT

## Calendars

- Standard: Mon-Fri 08:00-12:00, 13:00-17:00; Sat-Sun off.
- Testing Calendar: Mon-Sun 08:00-12:00, 13:00-20:00.

## Resources

| Resource | Rate |
| --- | --- |
| Northern Farm Foods | 35 |
| Mark Ravenswood | 35 |
| Sally Danvers | 40 |
| Lorraine Reese | 40 |
| Adrian Hasgill | 50 |
| bakersfield associates | 65 |
| People4People | 78.75 |
| Toby Arnott | 40 |
| Internal Resource |  |
| External Resource |  |
| Budget Cost |  |

## Schedule

| ID | WBS | Task | Type | Duration | Start | Finish | Predecessors | Complete | Remaining | Baseline start | Baseline finish | Baseline duration | Total slack | Free slack | Constraint | Calendar | Resources | Work | Actual work | Cost | Baseline cost | Actual cost |
| --- | --- | --- | --- | --- | --- | --- | --- | --- | --- | --- | --- | --- | --- | --- | --- | --- | --- | --- | --- | --- | --- | --- |
| 2 | 1 | Tendering process, contract |  | 50d | 2023-02-01 A | 2023-04-12 A |  | 100% |  | 2013-02-01 | 2013-04-26 | 60d |  |  |  |  | Toby Arnott [5%] | 20h | 20h | 2,800 | 2,960 | 2,800 |
| 4 | 2 | **Requirements** |  | 40d | 2023-04-12 A | 2023-06-07 | 2 | 75% | 10d | 2013-04-26 | 2013-07-05 | 50d | 97.88d |  |  |  |  | 224h | 168h | 8,320 | 10,400 | 6,240 |
| 5 | 2.1 | Requirements definition |  | 40d | 2023-04-12 A | 2023-06-07 |  | 75% | 10d | 2013-04-26 | 2013-07-05 | 50d | 97.88d | 0d |  |  | Northern Farm Foods [40%]; Toby Arnott [30%] | 224h | 168h | 8,320 | 10,400 | 6,240 |
| 6 | 2.2 | Requirement signoff | milestone | 0d | 2023-06-07 | 2023-06-07 | 5 |  |  | 2013-07-05 | 2013-07-05 | 0d | 97.88d |  |  |  |  |  |  |  |  |  |
| 8 | 3 | **Design and Development** |  | 60d | 2023-05-10 A | 2023-08-02 |  | 19% | 48.57d | 2013-06-07 | 2013-10-11 | 90d | 57.88d |  |  |  |  | 480h | 100h | 23,277.5 | 33,888.44 | 4,850 |
| 9 | 3.1 | **Analysis and Design** |  | 30d | 2023-05-10 A | 2023-06-21 |  | 50% | 15d | 2013-06-07 | 2013-10-04 | 85d | 87.88d |  |  |  |  | 180h | 90h | 8,400 | 11,610 | 4,200 |
| 10 | 3.1.1 | Analysis and Design |  | 30d | 2023-05-10 A | 2023-06-21 | 5SS+20d | 50% | 15d | 2013-06-07 | 2013-08-16 | 50d | 87.88d | 0d | finish no earlier than 2023-02-02 |  | Northern Farm Foods [25%]; bakersfield associates [25%]; Sally Danvers [25%] | 180h | 90h | 8,400 | 11,610 | 4,200 |
| 11 | 3.1.2 | Design signoff | milestone | 0d | 2023-06-21 | 2023-06-21 | 10 |  |  | 2013-08-16 | 2013-08-16 | 0d | 87.88d |  |  |  |  |  |  |  |  |  |
| 13 | 3.2 | **Development** |  | 30d | 2023-06-21 A | 2023-08-02 |  | 7% | 28d | 2013-07-19 | 2013-10-11 | 60d | 57.88d |  |  |  |  | 300h | 10h | 14,877.5 | 22,278.44 | 650 |
| 14 | 3.2.1 | Graphical resources and branding |  | 20d | 2023-06-21 A | 2023-07-19 | 5SS+20d, 10SS+30d | 25% | 15d | 2013-07-19 | 2013-08-30 | 30d | 67.88d |  |  |  | bakersfield associates [25%] | 40h | 10h | 2,600 | 3,810 | 650 |
| 15 | 3.2.2 | Database implementation |  | 25d | 2023-06-21 | 2023-07-26 | 10SS+30d |  |  | 2013-07-19 | 2013-09-13 | 40d | 62.88d |  |  |  | Adrian Hasgill [25%]; People4People [25%] | 100h |  | 6,437.5 | 10,068.44 |  |
| 16 | 3.2.3 | HTML etc. |  | 30d | 2023-06-21 | 2023-08-02 | 10SS+30d |  |  | 2013-07-19 | 2013-10-11 | 60d | 57.88d |  |  |  | Mark Ravenswood [50%] | 160h |  | 5,840 | 8,400 |  |
| 18 | 4 | **Testing** |  | 62.88d | 2023-07-12 | 2023-10-08 |  |  |  | 2013-08-09 | 2013-12-02 | 81.67d | 0d |  |  |  |  | 778.67h |  | 39,400 | 42,026.67 |  |
| 19 | 4.1 | Test script |  | 25d | 2023-07-12 | 2023-08-16 | 10SS+45d |  |  | 2013-08-09 | 2013-10-04 | 40d | 0d |  |  |  | Toby Arnott [10%]; Lorraine Reese [50%]; bakersfield associates [20%] | 192h |  | 11,400 | 12,160 |  |
| 20 | 4.2 | Testing |  | 95.88d | 2023-07-31 | 2023-10-08 | 19SS+26d |  |  | 2013-08-30 | 2013-12-02 | 66.67d | 0d |  |  | Testing Calendar | Northern Farm Foods [40%]; Toby Arnott [25%]; bakersfield associates [53.3%] | 586.67h |  | 28,000 | 29,866.67 |  |
| 21 | 4.3 | Acceptance | milestone | 0d | 2023-10-08 | 2023-10-08 | 20 |  |  | 2013-12-02 | 2013-12-02 | 0d | 0d |  |  |  |  |  |  |  |  |  |
| 23 | 5 | Live implementation |  | 10d | 2023-10-09 | 2023-10-20 | 18 |  |  | 2013-12-02 | 2013-12-16 | 10d | 0d |  |  |  | Adrian Hasgill [10%]; People4People [30%] | 32h |  | 2,290 | 2,290 |  |
| 24 | 6 | Go live | milestone | 0d | 2023-10-20 | 2023-10-20 | 23 |  |  | 2013-12-16 | 2013-12-16 | 0d | 0d |  |  |  |  |  |  |  |  |  |

Notes:
- 2: $2,000 fixed cost has been provided by Trevor in the Contracts Department and covers preparati0n of ITTs, distribution and initial processing of responses, as well as all associated discussions and costs.
