# House Build 01

Schedule from MS Project, 2023-06-06 to 2024-01-29.
Simon Sez IT

## Calendars

- Standard: Mon-Fri 08:00-12:00, 13:00-17:00; Sat-Sun off.

## Schedule

| ID | WBS | Task | Duration | Start | Finish | Predecessors | Total slack | Free slack |
| --- | --- | --- | --- | --- | --- | --- | --- | --- |
| 1 | 1 | **Site** | 6d? | 2023-06-06 | 2023-06-13 |  | 0d |  |
| 2 | 1.1 | Clear site | 4d | 2023-06-06 | 2023-06-09 |  | 0d |  |
| 3 | 1.2 | Trim | 1d? | 2023-06-06 | 2023-06-06 |  | 5d |  |
| 4 | 1.3 | Set out | 2d | 2023-06-12 | 2023-06-13 | 2 | 0d |  |
| 5 | 2 | **Base** | 24d | 2023-06-14 | 2023-07-17 | 1 | 0d |  |
| 6 | 2.1 | Trenches | 3d | 2023-06-14 | 2023-06-16 |  | 0d |  |
| 7 | 2.2 | Footings | 5d | 2023-06-19 | 2023-06-23 | 6 | 0d |  |
| 8 | 2.3 | Concrete | 6d | 2023-06-26 | 2023-07-03 | 7 | 0d |  |
| 9 | 2.4 | Base brickwork | 6d | 2023-07-04 | 2023-07-11 | 8 | 0d |  |
| 10 | 2.5 | Plumbing and services | 4d | 2023-07-12 | 2023-07-17 | 9 | 81d | 56d |
| 11 | 3 | **Lockup** | 51d | 2023-09-04 | 2023-11-13 |  | 0d |  |
| 12 | 3.1 | Window and door frames | 10d | 2023-09-04 | 2023-09-15 | 20, 21 | 0d |  |
| 13 | 3.2 | Brickwork | 9d | 2023-09-21 | 2023-10-03 | 12FS+3d | 0d |  |
| 14 | 3.3 | Roof structure and tile | 14d | 2023-10-04 | 2023-10-23 | 13, 22 | 0d |  |
| 15 | 3.4 | Fix rainwater goods | 3d | 2023-10-24 | 2023-10-26 | 14 | 0d |  |
| 16 | 3.5 | Exterior decoration | 10d | 2023-10-27 | 2023-11-09 | 15 | 0d |  |
| 17 | 3.6 | Waterproofing | 2d | 2023-11-10 | 2023-11-13 | 16 | 45d |  |
| 18 | 4 | **Frame** | 47d | 2023-07-13 | 2023-09-15 |  | 0d |  |
| 19 | 4.1 | Floor | 10d | 2023-07-13 | 2023-07-26 | 9FS+1d | 74d | 49d |
| 20 | 4.2 | Frame | 26d | 2023-07-13 | 2023-08-17 | 9FS+1d | 0d |  |
| 21 | 4.3 | Structural steel | 10d | 2023-08-21 | 2023-09-01 | 20FS+1d, 9 | 0d |  |
| 22 | 4.4 | Trussing | 10d | 2023-09-04 | 2023-09-15 | 20, 21 | 12d |  |
| 23 | 5 | **First Fix** | 8d | 2023-10-04 | 2023-10-13 | 13 | 25d |  |
| 24 | 5.1 | First fix carpentry | 8d | 2023-10-04 | 2023-10-13 | 19 | 25d |  |
| 25 | 5.2 | First fix plumbing | 6d | 2023-10-04 | 2023-10-11 | 10 | 27d |  |
| 26 | 5.3 | First fix electrics | 8d | 2023-10-04 | 2023-10-13 | 10 | 25d |  |

| ID | WBS | Task | Type | Duration | Start | Finish | Predecessors | Total slack |
| --- | --- | --- | --- | --- | --- | --- | --- | --- |
| 27 | 6 | **Fix** |  | 26d | 2023-11-10 | 2023-12-15 |  | 0d |
| 28 | 6.1 | Insulation |  | 6d | 2023-11-10 | 2023-11-17 | 16 | 0d |
| 29 | 6.2 | Plaster |  | 12d | 2023-11-20 | 2023-12-05 | 23, 28 | 0d |
| 30 | 6.3 | Floors |  | 8d | 2023-12-06 | 2023-12-15 | 29 | 0d |
| 31 | 7 | **Services** |  | 1d | 2023-12-18 | 2023-12-18 | 27 | 0d |
| 32 | 7.1 | Connect to services |  | 1d | 2023-12-18 | 2023-12-18 | 25, 26 | 0d |
| 33 | 8 | **Second Fix** |  | 9d | 2023-12-19 | 2023-12-29 | 31, 23 | 0d |
| 34 | 8.1 | Second fix carpentry |  | 7d | 2023-12-19 | 2023-12-27 |  | 2d |
| 35 | 8.2 | Second fix plumbing |  | 9d | 2023-12-19 | 2023-12-29 |  | 0d |
| 36 | 8.3 | Second fix electrics |  | 6d | 2023-12-19 | 2023-12-26 |  | 3d |
| 37 | 9 | **Finishing** |  | 17d | 2024-01-01 | 2024-01-23 | 33 | 0d |
| 38 | 9.1 | Decoration |  | 10d | 2024-01-01 | 2024-01-12 |  | 0d |
| 39 | 9.2 | Ceramic tiling |  | 6d | 2024-01-16 | 2024-01-23 | 38FS+1d | 0d |
| 40 | 10 | **Outside** |  | 6d | 2023-11-14 | 2023-11-21 | 11 | 45d |
| 41 | 10.1 | Landscaping |  | 6d | 2023-11-14 | 2023-11-21 |  | 45d |
| 42 | 10.2 | Driveway |  | 4d | 2023-11-14 | 2023-11-17 |  | 47d |
| 43 | 10.3 | Paths |  | 3d | 2023-11-14 | 2023-11-16 |  | 48d |
| 44 | 11 | **Completion** |  | 4d | 2024-01-24 | 2024-01-29 | 37, 40 | 0d |
| 45 | 11.1 | Final inspection |  | 2d | 2024-01-24 | 2024-01-25 | 17 | 0d |
| 46 | 11.2 | Correct snags |  | 2d | 2024-01-26 | 2024-01-29 | 45 | 0d |
| 47 | 12 | Signoff | milestone | 0d | 2024-01-29 | 2024-01-29 | 44 | 0d |
