# Project 2021 Advanced Exercise 02

Schedule from MS Project, 2023-06-06 to 2024-02-08.
Simon Sez IT

## Calendars

- Standard: Mon-Fri 08:00-12:00, 13:00-17:00; Sat-Sun off.

## Schedule

| ID | WBS | Task | Duration | Start | Finish | Predecessors | Baseline start | Baseline finish | Baseline duration | Total slack | Free slack | Constraint |
| --- | --- | --- | --- | --- | --- | --- | --- | --- | --- | --- | --- | --- |
| 1 | 1 | **Site** | 9d | 2023-06-06 | 2023-06-16 |  | 2023-06-06 | 2023-06-16 | 9d | 0d |  |  |
| 2 | 1.1 | Clear site | 6d | 2023-06-06 | 2023-06-13 |  | 2023-06-06 | 2023-06-13 | 6d | 0d |  |  |
| 3 | 1.2 | Set out | 3d | 2023-06-14 | 2023-06-16 | 2 | 2023-06-14 | 2023-06-16 | 3d | 0d |  |  |
| 4 | 2 | **Base** | 24d | 2023-06-19 | 2023-07-20 | 1 | 2023-06-19 | 2023-07-20 | 24d | 0d |  |  |
| 5 | 2.1 | Trenches | 3d | 2023-06-19 | 2023-06-21 |  | 2023-06-19 | 2023-06-21 | 3d | 0d |  |  |
| 6 | 2.2 | Footings | 5d | 2023-06-22 | 2023-06-28 | 5 | 2023-06-22 | 2023-06-28 | 5d | 0d |  |  |
| 7 | 2.3 | Concrete | 6d | 2023-06-29 | 2023-07-06 | 6 | 2023-06-29 | 2023-07-06 | 6d | 0d |  |  |
| 8 | 2.4 | Base brickwork | 6d | 2023-07-07 | 2023-07-14 | 7 | 2023-07-07 | 2023-07-14 | 6d | 0d |  |  |
| 9 | 2.5 | Plumbing and services | 4d | 2023-07-17 | 2023-07-20 | 8 | 2023-07-17 | 2023-07-20 | 4d | 82d | 61d |  |
| 10 | 3 | **Lockup** | 50d | 2023-09-07 | 2023-11-15 |  | 2023-09-07 | 2023-11-13 | 48d | 0d |  |  |
| 11 | 3.1 | Window and door frames | 10d | 2023-09-07 | 2023-09-20 | 19, 20 | 2023-09-07 | 2023-09-20 | 10d | 0d |  |  |
| 12 | 3.2 | Brickwork | 14d | 2023-09-26 | 2023-10-13 | 11FS+3d | 2023-09-26 | 2023-10-06 | 9d | 0d |  |  |
| 13 | 3.3 | Roof structure and tile | 8d | 2023-10-16 | 2023-10-25 | 12, 21 | 2023-10-09 | 2023-10-23 | 11d | 0d |  | finish no earlier than 2023-10-25 |
| 14 | 3.4 | Fix rainwater goods | 3d | 2023-10-26 | 2023-10-30 | 13 | 2023-10-24 | 2023-10-26 | 3d | 0d |  |  |
| 15 | 3.5 | Exterior decoration | 10d | 2023-10-31 | 2023-11-13 | 14 | 2023-10-27 | 2023-11-09 | 10d | 0d |  |  |
| 16 | 3.6 | Waterproofing | 2d | 2023-11-14 | 2023-11-15 | 15 | 2023-11-10 | 2023-11-13 | 2d | 51d |  |  |
| 17 | 4 | **Frame** | 47d | 2023-07-18 | 2023-09-20 |  | 2023-07-18 | 2023-09-20 | 47d | 0d |  |  |
| 18 | 4.1 | Floor | 10d | 2023-07-18 | 2023-07-31 | 8FS+1d | 2023-07-18 | 2023-07-31 | 10d | 76d | 54d |  |
| 19 | 4.2 | Frame | 26d | 2023-07-18 | 2023-08-22 | 8FS+1d | 2023-07-18 | 2023-08-22 | 26d | 0d |  |  |
| 20 | 4.3 | Structural steel | 10d | 2023-08-24 | 2023-09-06 | 19FS+1d, 8 | 2023-08-24 | 2023-09-06 | 10d | 0d |  |  |
| 21 | 4.4 | Trussing | 10d | 2023-09-07 | 2023-09-20 | 19, 20 | 2023-09-07 | 2023-09-20 | 10d | 17d |  |  |
| 22 | 5 | **First Fix** | 8d | 2023-10-16 | 2023-10-25 | 12 | 2023-10-09 | 2023-10-18 | 8d | 21d |  |  |
| 23 | 5.1 | First fix carpentry | 7d | 2023-10-16 | 2023-10-24 | 18 | 2023-10-09 | 2023-10-18 | 8d | 22d |  | finish no earlier than 2023-10-18 |
| 24 | 5.2 | First fix plumbing | 6d | 2023-10-16 | 2023-10-23 | 9 | 2023-10-09 | 2023-10-16 | 6d | 23d |  |  |
| 25 | 5.3 | First fix electrics | 8d | 2023-10-16 | 2023-10-25 | 9 | 2023-10-09 | 2023-10-18 | 8d | 21d |  |  |

| ID | WBS | Task | Type | Duration | Start | Finish | Predecessors | Baseline start | Baseline finish | Baseline duration | Total slack |
| --- | --- | --- | --- | --- | --- | --- | --- | --- | --- | --- | --- |
| 26 | 6 | **Fix** |  | 32d | 2023-11-14 | 2023-12-27 |  | 2023-11-10 | 2023-12-25 | 32d | 0d |
| 27 | 6.1 | Insulation |  | 8d | 2023-11-14 | 2023-11-23 | 15 | 2023-11-10 | 2023-11-21 | 8d | 0d |
| 28 | 6.2 | Plaster |  | 12d | 2023-11-24 | 2023-12-11 | 22, 27 | 2023-11-22 | 2023-12-07 | 12d | 0d |
| 29 | 6.3 | Floors |  | 12d | 2023-12-12 | 2023-12-27 | 28 | 2023-12-08 | 2023-12-25 | 12d | 0d |
| 30 | 7 | **Services** |  | 1d | 2023-12-28 | 2023-12-28 | 26 | 2023-12-26 | 2023-12-26 | 1d | 0d |
| 31 | 7.1 | Connect to services |  | 1d | 2023-12-28 | 2023-12-28 | 24, 25 | 2023-12-26 | 2023-12-26 | 1d | 0d |
| 32 | 8 | **Second Fix** |  | 9d | 2023-12-29 | 2024-01-10 | 30, 22 | 2023-12-27 | 2024-01-08 | 9d | 0d |
| 33 | 8.1 | Second fix carpentry |  | 7d | 2023-12-29 | 2024-01-08 |  | 2023-12-27 | 2024-01-04 | 7d | 2d |
| 34 | 8.2 | Second fix plumbing |  | 9d | 2023-12-29 | 2024-01-10 |  | 2023-12-27 | 2024-01-08 | 9d | 0d |
| 35 | 8.3 | Second fix electrics |  | 6d | 2023-12-29 | 2024-01-05 |  | 2023-12-27 | 2024-01-03 | 6d | 3d |
| 36 | 9 | **Finishing** |  | 17d | 2024-01-11 | 2024-02-02 | 32 | 2024-01-09 | 2024-01-31 | 17d | 0d |
| 37 | 9.1 | Decoration |  | 10d | 2024-01-11 | 2024-01-24 |  | 2024-01-09 | 2024-01-22 | 10d | 0d |
| 38 | 9.2 | Ceramic tiling |  | 6d | 2024-01-26 | 2024-02-02 | 37FS+1d | 2024-01-24 | 2024-01-31 | 6d | 0d |
| 39 | 10 | **Outside** |  | 6d | 2023-11-16 | 2023-11-23 | 10 | 2023-11-14 | 2023-11-21 | 6d | 51d |
| 40 | 10.1 | Landscaping |  | 6d | 2023-11-16 | 2023-11-23 |  | 2023-11-14 | 2023-11-21 | 6d | 51d |
| 41 | 10.2 | Driveway |  | 4d | 2023-11-16 | 2023-11-21 |  | 2023-11-14 | 2023-11-17 | 4d | 53d |
| 42 | 10.3 | Paths |  | 3d | 2023-11-16 | 2023-11-20 |  | 2023-11-14 | 2023-11-16 | 3d | 54d |
| 43 | 11 | **Completion** |  | 4d | 2024-02-05 | 2024-02-08 | 36, 39 | 2024-02-01 | 2024-02-06 | 4d | 0d |
| 44 | 11.1 | Final inspection |  | 2d | 2024-02-05 | 2024-02-06 | 16 | 2024-02-01 | 2024-02-02 | 2d | 0d |
| 45 | 11.2 | Correct snags |  | 2d | 2024-02-07 | 2024-02-08 | 44 | 2024-02-05 | 2024-02-06 | 2d | 0d |
| 46 | 12 | Signoff | milestone | 0d | 2024-02-08 | 2024-02-08 | 43 | 2024-02-06 | 2024-02-06 | 0d | 0d |
