# Project 2016 Advanced Exercise 03

Schedule from MS Project, 2023-02-01 to 2024-01-25, status date 2023-06-24, costs in $, A marks actual dates.
Simon Sez IT

## Calendars

- Standard: Mon-Fri 08:00-12:00, 13:00-17:00; Sat-Sun off.

## Resources

| Resource | Rate |
| --- | --- |
| Northern Farm Foods | 35 |
| Mark Ravenswood | 35 |
| Sally Danvers | 40 |
| Lorraine Reese | 40 |
| Adrian Hasgill | 50 |
| bakersfield associates | 65 |
| People4People | 78.75 |
| Deborah Ashby | 40 |
| Internal Resource |  |
| External Resource |  |
| Budget Cost |  |

## Schedule

| ID | WBS | Task | Type | Duration | Start | Finish | Predecessors | Complete | Remaining | Actual start | Total slack | Free slack | Constraint | Resources | Work | Actual work | Cost | Actual cost |
| --- | --- | --- | --- | --- | --- | --- | --- | --- | --- | --- | --- | --- | --- | --- | --- | --- | --- | --- |
| 2 | 1 | Tendering process, contract |  | 50d | 2023-02-01 A | 2023-04-12 A |  | 100% |  |  |  |  |  | Deborah Ashby [5%] | 20h | 20h | 2,800 | 2,800 |
| 4 | 2 | **Requirements** |  | 60d | 2023-04-12 A | 2023-07-05 | 2 | 75% | 15d |  | 146d |  |  |  | 336h | 252h | 12,480 | 9,360 |
| 5 | 2.1 | Requirements definition |  | 60d | 2023-04-12 A | 2023-07-05 |  | 75% | 15d |  | 146d | 0d |  | Northern Farm Foods [40%]; Deborah Ashby [30%] | 336h | 252h | 12,480 | 9,360 |
| 6 | 2.2 | Requirement signoff | milestone | 0d | 2023-07-05 | 2023-07-05 | 5 |  |  |  | 146d |  |  |  |  |  |  |  |
| 8 | 3 | **Design and Development** |  | 93.88d | 2023-05-10 A | 2023-09-18 |  | 23% | 72.21d |  | 92.12d |  |  |  | 590h | 160h | 28,777.5 | 7,650 |
| 9 | 3.1 | **Analysis and Design** |  | 58d | 2023-06-29 | 2023-09-18 |  | 56% | 25.78d | 2023-05-10 |  |  |  |  | 270h | 150h | 12,600 | 7,000 |
| 10 | 3.1.1 | Analysis and Design |  | 45d | 2023-05-10 A | 2023-07-12 | 5SS+20d | 56% | 20d |  | 141d | 0d | finish no earlier than 2023-02-02 | Northern Farm Foods [25%]; bakersfield associates [25%]; Sally Danvers [25%] | 270h | 150h | 12,600 | 7,000 |
| 11 | 3.1.2 | Design signoff | milestone | 0d | 2023-07-12 | 2023-07-12 | 10 |  |  |  | 141d |  |  |  |  |  |  |  |
| 13 | 3.2 | **Development** |  | 40d | 2023-06-21 A | 2023-08-16 |  | 6% | 37.65d |  | 116d |  |  |  | 320h | 10h | 16,177.5 | 650 |
| 14 | 3.2.1 | Graphical resources and branding |  | 30d | 2023-06-21 A | 2023-08-02 | 5SS+20d, 10SS+30d | 17% | 25d |  | 126d |  |  | bakersfield associates [25%] | 60h | 10h | 3,900 | 650 |
| 15 | 3.2.2 | Database implementation |  | 25d | 2023-07-05 | 2023-08-09 | 10SS+40d |  |  |  | 121d |  |  | Adrian Hasgill [25%]; People4People [25%] | 100h |  | 6,437.5 |  |
| 16 | 3.2.3 | HTML etc. |  | 30d | 2023-07-05 | 2023-08-16 | 10SS+40d |  |  |  | 116d |  |  | Mark Ravenswood [50%] | 160h |  | 5,840 |  |
| 18 | 4 | **Testing** |  | 126d | 2023-07-19 | 2024-01-11 |  |  |  |  | 0d |  |  |  | 786.13h |  | 39,789.33 |  |
| 19 | 4.1 | Test script |  | 25d | 2023-07-19 | 2023-08-23 | 10SS+50d |  |  |  | 0d |  |  | Deborah Ashby [10%]; Lorraine Reese [50%]; bakersfield associates [20%] | 192h |  | 11,400 |  |
| 20 | 4.2 | Testing |  | 100d | 2023-08-24 | 2024-01-11 | 19SS+26d |  |  |  | 0d |  |  | Northern Farm Foods [40%]; Deborah Ashby [25%]; bakersfield associates [53.3%] | 594.13h |  | 28,389.33 |  |
| 21 | 4.3 | Acceptance | milestone | 0d | 2024-01-11 | 2024-01-11 | 20 |  |  |  | 0d |  |  |  |  |  |  |  |
| 23 | 5 | **Implementation** |  | 10d | 2024-01-11 | 2024-01-25 |  |  |  |  | 0d |  |  |  | 32h |  | 2,290 |  |
| 24 | 5.1 | Live implementation |  | 10d | 2024-01-11 | 2024-01-25 | 18 |  |  |  | 0d |  |  | Adrian Hasgill [10%]; People4People [30%] | 32h |  | 2,290 |  |
| 25 | 5.2 | Go live | milestone | 0d | 2024-01-25 | 2024-01-25 | 24 |  |  |  | 0d |  |  |  |  |  |  |  |

Notes:
- 2: $2,000 fixed cost has been provided by Trevor in the Contracts Department and covers preparati0n of ITTs, distribution and initial processing of responses, as well as all associated discussions and costs.
