# Project 2021 Advanced Exercise 07

Schedule from MS Project, 2023-02-01 to 2023-10-30, status date 2023-07-09, costs in $, A marks actual dates.
Simon Sez IT

## Calendars

- Standard: Mon-Fri 08:00-12:00, 13:00-17:00; Sat-Sun off.

## Resources

| Resource | Group | Rate | Cost per use |
| --- | --- | --- | --- |
| Northern Farm Foods | External | 35 |  |
| Mark Ravenswood | Internal | 35 |  |
| Sally Danvers | Internal | 40 |  |
| Lorraine Reese | Internal | 40 |  |
| Adrian Hasgill | Internal | 52.5 |  |
| bakersfield associates | External | 65 |  |
| People4People | External | 75 |  |
| Deborah Ashby | Internal | 40 |  |
| Contract Consultant | External |  | 400 |

## Schedule

| ID | WBS | Task | Type | Duration | Start | Finish | Predecessors | Complete | Remaining | Actual start | Baseline start | Baseline finish | Baseline duration | Total slack | Free slack | Constraint | Resources | Work | Actual work | Cost | Baseline cost | Actual cost |
| --- | --- | --- | --- | --- | --- | --- | --- | --- | --- | --- | --- | --- | --- | --- | --- | --- | --- | --- | --- | --- | --- | --- |
| 2 | 1 | Tendering process, contract |  | 50d | 2023-02-01 A | 2023-04-12 A |  | 100% |  |  | 2016-02-01 | 2016-04-11 | 50d |  |  |  | Deborah Ashby [5%]; Contract Consultant | 20h | 20h | 3,200 | 3,200 | 3,200 |
| 4 | 2 | **Requirements** |  | 65d | 2023-04-12 A | 2023-07-12 A | 2 | 100% |  |  | 2016-04-11 | 2016-07-04 | 60d |  |  |  |  | 364h | 364h | 13,520 | 12,480 | 13,520 |
| 5 | 2.1 | Requirements definition |  | 65d | 2023-04-12 A | 2023-07-12 A |  | 100% |  |  | 2016-04-11 | 2016-07-04 | 60d |  |  |  | Northern Farm Foods [40%]; Deborah Ashby [30%] | 364h | 364h | 13,520 | 12,480 | 13,520 |
| 6 | 2.2 | Requirement signoff | milestone | 0d | 2023-07-12 A | 2023-07-12 A | 5 | 100% |  |  | 2016-07-04 | 2016-07-04 | 0d |  |  |  |  |  |  |  |  |  |
| 8 | 3 | **Design and Development** |  | 93.88d | 2023-05-10 A | 2023-09-18 |  | 49% | 47.63d |  | 2016-05-09 | 2016-09-15 | 93.88d | 29.62d |  |  |  | 626h | 324.5h | 33,320 | 27,840 | 8,922.5 |
| 9 | 3.1 | **Analysis and Design** |  | 58d | 2023-06-29 | 2023-09-18 |  | 75% | 14.5d | 2023-05-10 | 2016-06-28 | 2016-09-15 | 58d |  |  |  |  | 306h | 229.5h | 14,280 | 12,150 | 5,737.5 |
| 10 | 3.1.1 | Analysis and Design |  | 51d | 2023-05-10 A | 2023-07-20 | 5SS+20d | 75% | 12.75d |  | 2016-05-09 | 2016-07-11 | 45d | 72.5d | 0d | finish no earlier than 2023-02-02 | Northern Farm Foods [25%]; bakersfield associates [25%]; Sally Danvers [25%] | 306h | 229.5h | 14,280 | 12,150 | 5,737.5 |
| 11 | 3.1.2 | Design signoff | milestone | 0d | 2023-07-20 | 2023-07-20 | 10 |  |  |  | 2016-07-11 | 2016-07-11 | 0d | 72.5d |  |  |  |  |  |  |  |  |
| 13 | 3.2 | **Development** |  | 40d | 2023-06-21 A | 2023-08-16 |  | 34% | 26.47d |  | 2016-06-20 | 2016-08-15 | 40d | 53.5d |  |  |  | 320h | 95h | 19,040 | 15,690 | 3,185 |
| 14 | 3.2.1 | Graphical resources and branding |  | 30d | 2023-06-21 A | 2023-08-02 | 5SS+20d, 10SS+30d | 50% | 15d |  | 2016-06-20 | 2016-08-01 | 30d | 63.5d |  |  | bakersfield associates [25%] | 60h | 30h | 6,300 | 3,600 |  |
| 15 | 3.2.2 | Database implementation |  | 25d | 2023-07-05 A | 2023-08-09 | 10SS+40d | 25% | 18.75d |  | 2016-07-04 | 2016-08-08 | 25d | 58.5d |  |  | Adrian Hasgill [25%]; People4People [25%] | 100h | 25h | 6,900 | 6,250 | 1,725 |
| 16 | 3.2.3 | HTML etc. |  | 30d | 2023-07-05 A | 2023-08-16 | 10SS+40d | 25% | 22.5d |  | 2016-07-04 | 2016-08-15 | 30d | 53.5d |  |  | Mark Ravenswood [50%] | 160h | 40h | 5,840 | 5,840 | 1,460 |
| 18 | 4 | **Testing** |  | 63.5d | 2023-07-19 | 2023-10-16 |  |  |  |  | 2016-07-18 | 2016-10-17 | 65.88d | 0d |  |  |  | 592h |  | 32,365 | 36,301.33 |  |
| 19 | 4.1 | Test script |  | 25d | 2023-07-19 | 2023-08-23 | 10SS+50d |  |  |  | 2016-07-18 | 2016-08-22 | 25d | 0d |  |  | Deborah Ashby [10%]; Lorraine Reese [50%]; bakersfield associates [20%] | 192h |  | 9,240 | 9,000 |  |
| 20 | 4.2 | Testing |  | 37.5d | 2023-08-24 | 2023-10-16 | 19SS+26d |  |  |  | 2016-08-06 | 2016-10-17 | 100d | 0d |  |  | Northern Farm Foods [25%]; Deborah Ashby [25%]; bakersfield associates [50%] | 400h |  | 23,125 | 27,301.33 |  |
| 21 | 4.3 | Acceptance | milestone | 0d | 2023-10-16 | 2023-10-16 | 20 |  |  |  | 2016-10-17 | 2016-10-17 | 0d | 0d |  |  |  |  |  |  |  |  |
| 23 | 5 | Live implementation |  | 10d | 2023-10-16 | 2023-10-30 | 18 |  |  |  | 2016-10-18 | 2016-10-31 | 10d | 0d |  |  | Adrian Hasgill [10%]; People4People [30%] | 32h |  | 2,220 | 2,200 |  |
| 24 | 6 | Go live | milestone | 0d | 2023-10-30 | 2023-10-30 | 23 |  |  |  | 2016-10-31 | 2016-10-31 | 0d | 0d |  |  |  |  |  |  |  |  |

Notes:
- 2: $2,000 fixed cost has been provided by Trevor in the Contracts Department and covers preparati0n of ITTs, distribution and initial processing of responses, as well as all associated discussions and costs.
