# Project 2023 Advanced Exercise 08 Answer

Schedule from MS Project, 2023-02-01 to 2023-09-19, status date 2023-08-06, costs in $, A marks actual dates.
Simon Sez IT

## Calendars

- Standard: Mon-Fri 08:00-12:00, 13:00-17:00; Sat-Sun off.

## Resources

| Resource | Group | Rate | Cost per use |
| --- | --- | --- | --- |
| Northern Farm Foods | External | 35 |  |
| Mark Ravenswood | Internal | 35 |  |
| Sally Danvers | Internal | 40 |  |
| Lorraine Reese | Internal | 40 |  |
| Adrian Hasgill | Internal | 52.5 |  |
| bakersfield associates | External | 65 |  |
| People4People | External | 75 |  |
| Deborah Ashby | Internal | 40 |  |
| Contract Consultant | External |  | 400 |

## Schedule

| ID | WBS | Task | Type | Duration | Start | Finish | Predecessors | Complete | Remaining | Baseline start | Baseline finish | Baseline duration | Total slack | Resources | Work | Actual work | Cost | Baseline cost | Actual cost |
| --- | --- | --- | --- | --- | --- | --- | --- | --- | --- | --- | --- | --- | --- | --- | --- | --- | --- | --- | --- |
| 2 | 1 | Tendering process, contract |  | 50d | 2023-02-01 A | 2023-04-12 A |  | 100% |  | 2023-02-01 | 2023-04-12 | 50d |  | Deborah Ashby [5%]; Contract Consultant | 20h | 20h | 3,200 | 3,200 | 3,200 |
| 4 | 2 | **Requirements** |  | 65d | 2023-04-12 A | 2023-07-12 A | 2 | 100% |  | 2023-04-12 | 2023-07-12 | 65d |  |  | 364h | 364h | 13,520 | 13,520 | 13,520 |
| 5 | 2.1 | Requirements definition |  | 65d | 2023-04-12 A | 2023-07-12 A |  | 100% |  | 2023-04-12 | 2023-07-12 | 65d |  | Northern Farm Foods [40%]; Deborah Ashby [30%] | 364h | 364h | 13,520 | 13,520 | 13,520 |
| 6 | 2.2 | Requirement signoff | milestone | 0d | 2023-07-12 A | 2023-07-12 A | 5 | 100% |  | 2023-07-12 | 2023-07-12 | 0d |  |  |  |  |  |  |  |
| 8 | 3 | **Design and Development** |  | 61d | 2023-05-10 A | 2023-08-03 A |  | 100% |  | 2023-05-10 | 2023-08-03 | 61d |  |  | 626h | 626h | 33,320 | 33,320 | 33,320 |
| 9 | 3.1 | **Analysis and Design** |  | 44.62d | 2023-05-10 A | 2023-07-11 A |  | 100% |  | 2023-05-10 | 2023-07-11 | 44.62d |  |  | 306h | 306h | 14,280 | 14,280 | 14,280 |
| 10 | 3.1.1 | Analysis and Design |  | 44.62d | 2023-05-10 A | 2023-07-11 A | 5SS+15d | 100% |  | 2023-05-10 | 2023-07-11 | 44.62d |  | Northern Farm Foods [50%]; bakersfield associates [50%]; Sally Danvers [50%] | 306h | 306h | 14,280 | 14,280 | 14,280 |
| 11 | 3.1.2 | Design signoff | milestone | 0d | 2023-07-10 A | 2023-07-10 A | 10 | 100% |  | 2023-07-10 | 2023-07-10 | 0d |  |  |  |  |  |  |  |
| 13 | 3.2 | **Development** |  | 31d | 2023-06-21 A | 2023-08-03 A |  | 100% |  | 2023-06-21 | 2023-08-03 | 31d |  |  | 320h | 320h | 19,040 | 19,040 | 19,040 |
| 14 | 3.2.1 | Graphical resources and branding |  | 22.5d | 2023-06-21 A | 2023-07-21 A | 5SS+15d, 10SS+30d | 100% |  | 2023-06-21 | 2023-07-21 | 22.5d |  | bakersfield associates [50%] | 60h | 60h | 6,300 | 6,300 | 6,300 |
| 15 | 3.2.2 | Database implementation |  | 15.62d | 2023-07-05 A | 2023-07-26 A | 10SS+35d | 100% |  | 2023-07-05 | 2023-07-26 | 15.62d |  | Adrian Hasgill [50%]; People4People [50%] | 100h | 100h | 6,900 | 6,900 | 6,900 |
| 16 | 3.2.3 | HTML etc. |  | 21d | 2023-07-05 A | 2023-08-03 A | 10SS+35d | 100% |  | 2023-07-05 | 2023-08-03 | 21d |  | Mark Ravenswood | 160h | 160h | 5,840 | 5,840 | 5,840 |
| 18 | 4 | **Testing** |  | 39.75d | 2023-07-12 A | 2023-09-05 |  | 36% | 25.3d | 2023-07-12 | 2023-09-05 | 39.75d | 0d |  | 652h | 192h | 34,465 | 34,465 | 9,240 |
| 19 | 4.1 | Test script |  | 15d | 2023-07-12 A | 2023-08-02 A | 10SS+45d | 100% |  | 2023-07-12 | 2023-08-02 | 15d |  | Deborah Ashby [20%]; Lorraine Reese; bakersfield associates [40%] | 192h | 192h | 9,240 | 9,240 | 9,240 |
| 20 | 4.2 | Testing |  | 18.75d | 2023-08-10 | 2023-09-05 | 19SS+21d |  |  | 2023-08-10 | 2023-09-05 | 18.75d | 0d | Northern Farm Foods [50%]; Deborah Ashby [50%]; bakersfield associates | 400h |  | 23,125 | 23,125 |  |
| 21 | 4.3 | User Testing |  | 7.5d | 2023-08-17 | 2023-08-28 | 20SS+5d |  |  | 2023-08-17 | 2023-08-28 | 7.5d | 6.25d | Northern Farm Foods | 60h |  | 2,100 | 2,100 |  |
| 22 | 4.4 | Acceptance | milestone | 0d | 2023-09-05 | 2023-09-05 | 20, 21 |  |  | 2023-09-05 | 2023-09-05 | 0d | 0d |  |  |  |  |  |  |
| 24 | 5 | Live implementation |  | 10d | 2023-09-05 | 2023-09-19 | 18 |  |  | 2023-09-05 | 2023-09-19 | 10d | 0d | Adrian Hasgill [10%]; People4People [30%] | 32h |  | 2,220 | 2,220 |  |
| 25 | 6 | Go live | milestone | 0d | 2023-09-19 | 2023-09-19 | 24 |  |  | 2023-09-19 | 2023-09-19 | 0d | 0d |  |  |  |  |  |  |

Notes:
- 2: $2,000 fixed cost has been provided by Trevor in the Contracts Department and covers preparati0n of ITTs, distribution and initial processing of responses, as well as all associated discussions and costs.
