# Training Rollout Project

Schedule from MS Project, 2023-03-01 to 2023-10-17, costs in $, A marks actual dates.

## Calendars

- Standard: Mon-Fri 09:00-12:00, 13:00-18:00; Sat-Sun off. Exceptions (off unless hours are given): 2023-03-06 to 2024-02-05 (Monthly Meeting, recurring), 2023-05-01 (Spring Bank Holiday), 2023-06-12 to 2023-06-16 (Office Renovations).

## Resources

| Resource | Group | Unit | Rate | Cost per use |
| --- | --- | --- | --- | --- |
| IT Trainer |  |  |  |  |
| Olivia Hudson | IT Dept |  |  |  |
| Ben Lee | IT Dept |  |  |  |
| Training Team Lead |  |  | 80 |  |
| Admin Assistant |  |  |  |  |
| Office Manager |  |  |  |  |
| Credit Controller |  |  |  |  |
| Network Admin | IT Dept |  |  |  |
| John Matthews |  |  | 9.38 |  |
| Sandwiches |  | Palette | 30 |  |
| Pens |  | Packs | 7 |  |
| Laptop |  |  | 50 | 20 |
| Airfare |  |  |  |  |

## Schedule

| ID | WBS | Task | Type | Duration | Start | Finish | Predecessors | Complete | Remaining | Baseline start | Baseline finish | Baseline duration | Baseline 1 start | Baseline 1 finish | Total slack | Free slack | Constraint | Resources | Work | Actual work | Cost | Baseline cost | Actual cost |
| --- | --- | --- | --- | --- | --- | --- | --- | --- | --- | --- | --- | --- | --- | --- | --- | --- | --- | --- | --- | --- | --- | --- | --- |
| 1 | 1 | **PREPARATION PHASE** |  | 15d | 2023-03-07 A | 2023-03-27 |  | 80% | 3d | 2023-03-07 | 2023-03-27 | 15d | 2023-03-07 | 2023-03-27 | 5d |  |  |  | 88h | 72h | 1,280 | 1,280 | 640 |
| 2 | 1.1 | Conduct course research |  | 3d | 2023-03-07 A | 2023-03-09 A |  | 100% |  | 2023-03-07 | 2023-03-09 | 3d | 2023-03-07 | 2023-03-09 |  |  |  | IT Trainer | 24h | 24h |  |  |  |
| 3 | 1.2 | Draft course outline |  | 3d | 2023-03-13 A | 2023-03-15 A |  | 100% |  | 2023-03-13 | 2023-03-15 | 3d | 2023-03-13 | 2023-03-15 |  |  | start no earlier than 2023-03-11 | IT Trainer | 24h | 24h |  |  |  |
| 4 | 1.3 | Send outline to training team for review |  | 1d | 2023-03-16 A | 2023-03-16 A | 3 | 100% |  | 2023-03-16 | 2023-03-16 | 1d | 2023-03-16 | 2023-03-16 |  |  |  | Training Team Lead | 8h | 8h | 640 | 640 | 640 |
| 5 | 1.4 | Update course outline |  | 1d | 2023-03-23 A | 2023-03-23 A | 4FS+4d | 100% |  | 2023-03-23 | 2023-03-23 | 1d | 2023-03-23 | 2023-03-23 |  |  |  | IT Trainer; Ben Lee | 16h | 16h |  |  |  |
| 6 | 1.5 | Send outline to training manager for review |  | 1d | 2023-03-24 | 2023-03-24 | 5 |  |  | 2023-03-24 | 2023-03-24 | 1d | 2023-03-24 | 2023-03-24 | 5d | 0d |  | IT Trainer | 8h |  |  |  |  |
| 7 | 1.6 | Outline approved | milestone | 0d | 2023-03-24 | 2023-03-24 | 6 |  |  | 2023-03-24 | 2023-03-24 | 0d | 2023-03-24 | 2023-03-24 | 5d | 0d |  | IT Trainer; Training Team Lead |  |  |  |  |  |
| 8 | 1.7 | Finalise course outline |  | 1d | 2023-03-27 | 2023-03-27 | 7 |  |  | 2023-03-27 | 2023-03-27 | 1d | 2023-03-27 | 2023-03-27 | 5d | 0d |  | Training Team Lead | 8h |  | 640 | 640 |  |
| 9 | 2 | **RECORDING PHASE** |  | 84d | 2023-03-28 A | 2023-08-03 |  | 7% | 78.16d | 2023-03-28 | 2023-07-27 | 79d | 2023-03-28 | 2023-07-27 | 50d |  |  |  | 608h | 40h | 4,480 | 4,480 |  |
| 10 | 2.1 | Write training notes |  | 10d | 2023-03-28 A | 2023-04-11 | 8 | 50% | 5d | 2023-03-28 | 2023-04-11 | 10d | 2023-03-28 | 2023-04-11 | 124d |  |  | IT Trainer | 80h | 40h |  |  |  |
| 11 | 2.2 | Record training videos |  | 30d | 2023-04-12 | 2023-06-20 |  |  |  | 2023-04-13 | 2023-05-26 | 30d | 2023-04-13 | 2023-05-26 | 70.5d | 0d | start no earlier than 2023-03-27 | IT Trainer | 240h |  |  |  |  |
| 12 | 2.3 | Edit training videos |  | 9.88d | 2023-06-20 | 2023-07-06 | 11 |  |  | 2023-05-29 | 2023-06-13 | 9.88d | 2023-05-29 | 2023-06-13 | 70.5d |  |  | Ben Lee; Olivia Hudson | 112h |  |  |  |  |
| 13 | 2.4 | Upload to the cloud |  | 2d | 2023-07-10 | 2023-07-11 |  |  |  | 2023-06-19 | 2023-06-20 | 2d | 2023-06-19 | 2023-06-20 | 51d | 0d | start no earlier than 2023-07-10 | Ben Lee | 16h |  |  |  |  |
| 14 | 2.5 | Quality control review |  | 7d | 2023-07-26 | 2023-08-03 | 13 |  |  | 2023-06-21 | 2023-06-29 | 7d | 2023-06-21 | 2023-06-29 | 50d | 60d |  | Admin Assistant | 56h |  |  |  |  |
| 15 | 2.6 | Make video ammendments |  | 4d | 2023-05-15 | 2023-05-18 |  |  |  | 2023-06-30 | 2023-07-06 | 4d | 2023-06-30 | 2023-07-06 | 57d | 0d | start no earlier than 2023-05-15 | IT Trainer | 32h |  |  |  |  |
| 16 | 2.7 | Training team review |  | 7d | 2023-05-19 | 2023-05-29 | 15 |  |  | 2023-07-07 | 2023-07-17 | 7d | 2023-07-07 | 2023-07-17 | 57d | 0d |  | Training Team Lead | 56h |  | 4,480 | 4,480 |  |
| 17 | 2.8 | Video content approved | milestone | 0d | 2023-05-29 | 2023-05-29 | 16 |  |  | 2023-07-17 | 2023-07-17 | 0d | 2023-07-17 | 2023-07-17 | 57d | 0d |  | Training Team Lead |  |  |  |  |  |
| 18 | 2.9 | Upload to LMS |  | 2d | 2023-06-07 | 2023-06-08 | 17 |  |  | 2023-07-26 | 2023-07-27 | 2d | 2023-07-26 | 2023-07-27 | 84d |  |  | Admin Assistant | 16h |  |  |  |  |
| 19 | 3 | **DOCUMENTATION PHASE** |  | 56d | 2023-06-07 | 2023-09-01 |  |  |  | 2023-07-12 | 2023-09-01 | 37d | 2023-07-12 | 2023-09-01 | 19d |  |  |  | 360h |  | 3,200 | 3,200 |  |
| 20 | 3.1 | Write reference guides |  | 10d | 2023-06-07 | 2023-07-12 | 17 |  |  | 2023-07-26 | 2023-08-23 | 10d | 2023-07-26 | 2023-08-23 | 57d | 29d |  | IT Trainer | 80h |  |  |  |  |
| 21 | 3.2 | Write course questions | manual | 10d | 2023-08-08 | 2023-08-22 |  |  |  | 2023-08-08 | 2023-08-22 | 10d | 2023-08-08 | 2023-08-22 |  |  |  | IT Trainer | 80h |  |  |  |  |
| 22 | 3.3 | Write course description for website | manual | 10d | 2023-07-12 | 2023-07-25 |  |  |  | 2023-07-12 | 2023-07-25 | 10d | 2023-07-12 | 2023-07-25 |  |  |  | Admin Assistant | 80h |  |  |  |  |
| 23 | 3.4 | Write exercises | manual | 10d | 2023-07-12 | 2023-07-25 |  |  |  | 2023-07-12 | 2023-07-25 | 10d | 2023-07-12 | 2023-07-25 |  |  |  | IT Trainer | 80h |  |  |  |  |
| 24 | 3.5 | Quality control review |  | 5d | 2023-08-28 | 2023-09-01 | 20, 21, 22, 23 |  |  | 2023-08-28 | 2023-09-01 | 5d | 2023-08-28 | 2023-09-01 | 28d | 0d |  | Training Team Lead | 40h |  | 3,200 | 3,200 |  |
| 25 | 3.6 | Documentation approved | milestone | 0d | 2023-09-01 | 2023-09-01 | 24 |  |  | 2023-09-01 | 2023-09-01 | 0d | 2023-09-01 | 2023-09-01 | 28d | 0d |  | Training Team Lead |  |  |  |  |  |

| ID | WBS | Task | Type | Duration | Start | Finish | Predecessors | Baseline start | Baseline finish | Baseline duration | Baseline 1 start | Baseline 1 finish | Total slack | Free slack | Constraint | Resources | Work | Cost | Baseline cost |
| --- | --- | --- | --- | --- | --- | --- | --- | --- | --- | --- | --- | --- | --- | --- | --- | --- | --- | --- | --- |
| 26 | 4 | **GO LIVE PHASE** |  | 2d | 2023-09-05 | 2023-09-06 |  | 2023-09-05 | 2023-09-06 | 2d | 2023-09-05 | 2023-09-06 | 28d |  |  |  | 16h |  |  |
| 27 | 4.1 | Upload to LMS |  | 2d | 2023-09-05 | 2023-09-06 | 25 | 2023-09-05 | 2023-09-06 | 2d | 2023-09-05 | 2023-09-06 | 28d | 0d |  | Admin Assistant | 16h |  |  |
| 28 | 4.2 | Set course live | milestone | 0d | 2023-09-06 | 2023-09-06 | 27 | 2023-09-06 | 2023-09-06 | 0d | 2023-09-06 | 2023-09-06 | 28d |  |  | Admin Assistant |  |  |  |
| 29 | 5 | **LIVE TRAINING PHASE** |  | 152d | 2023-03-01 | 2023-10-17 |  | 2023-03-01 | 2023-10-17 | 152d | 2023-03-01 | 2023-10-17 | 0d |  |  |  | 424h | 13,086 | 13,086 |
| 30 | 5.1 | **Organise Training Teams** |  | 143d | 2023-03-01 | 2023-10-04 |  | 2023-03-01 | 2023-10-04 | 143d | 2023-03-01 | 2023-10-04 | 9d |  |  |  | 160h | 6,400 | 6,400 |
| 31 | 5.1.1 | Assign trainers to teams |  | 2d | 2023-03-01 | 2023-03-02 |  | 2023-03-01 | 2023-03-02 | 2d | 2023-03-01 | 2023-03-02 | 102d |  |  | Training Team Lead | 16h | 1,280 | 1,280 |
| 32 | 5.1.2 | Assign teams to regions | manual | 4d | 2023-08-09 | 2023-08-14 | 31 | 2023-08-09 | 2023-08-14 | 4d | 2023-08-09 | 2023-08-14 |  |  | start no earlier than 2023-08-09 | Training Team Lead | 32h | 2,560 | 2,560 |
| 33 | 5.1.3 | **Travel and Accommodation** |  | 16d | 2023-09-12 | 2023-10-04 |  | 2023-09-12 | 2023-10-04 | 16d | 2023-09-12 | 2023-10-04 | 0d |  |  |  | 112h | 2,560 | 2,560 |
| 34 | 5.1.3.1 | Research local hotels |  | 7d | 2023-09-15 | 2023-09-26 | 47 | 2023-09-15 | 2023-09-26 | 7d | 2023-09-15 | 2023-09-26 | 14d |  |  | Admin Assistant | 56h |  |  |
| 35 | 5.1.3.2 | **Create hotel shortlist** |  | 8d | 2023-09-12 | 2023-09-21 |  | 2023-09-12 | 2023-09-21 | 8d | 2023-09-12 | 2023-09-21 | 0d |  |  |  | 40h | 2,560 | 2,560 |
| 36 | 5.1.3.2.1 | Send shortlist to training manager | manual | 1d | 2023-09-12 | 2023-09-12 |  | 2023-09-12 | 2023-09-12 | 1d | 2023-09-12 | 2023-09-12 |  |  | start no earlier than 2023-09-01 | Admin Assistant | 8h |  |  |
| 37 | 5.1.3.2.2 | Get budget approval |  | 4d | 2023-09-18 | 2023-09-21 | 36 | 2023-09-18 | 2023-09-21 | 4d | 2023-09-18 | 2023-09-21 | 0d |  |  | Training Team Lead | 32h | 2,560 | 2,560 |
| 38 | 5.1.3.3 | Book hotel |  | 1d | 2023-10-03 | 2023-10-03 | 37 | 2023-10-03 | 2023-10-03 | 1d | 2023-10-03 | 2023-10-03 | 0d |  |  | Admin Assistant | 8h |  |  |
| 39 | 5.1.3.4 | Hotel booked | milestone | 0d | 2023-10-03 | 2023-10-03 | 38 | 2023-10-03 | 2023-10-03 | 0d | 2023-10-03 | 2023-10-03 | 0d |  | start no earlier than 2023-09-11 |  |  |  |  |
| 40 | 5.1.3.5 | Book flights |  | 1d | 2023-10-04 | 2023-10-04 | 39 | 2023-10-04 | 2023-10-04 | 1d | 2023-10-04 | 2023-10-04 | 0d |  |  | Admin Assistant | 8h |  |  |
| 41 | 5.1.3.6 | Flight booked | milestone | 0d | 2023-10-04 | 2023-10-04 | 40 | 2023-10-04 | 2023-10-04 | 0d | 2023-10-04 | 2023-10-04 | 0d |  |  |  |  |  |  |
| 42 | 5.2 | **Venues** |  | 9d | 2023-08-15 | 2023-08-25 |  | 2023-08-15 | 2023-08-25 | 9d | 2023-08-15 | 2023-08-25 | -1d | 0d |  |  | 72h | 2,201 | 2,201 |
| 43 | 5.2.1 | Liaise with local contacts re: venues |  | 5d | 2023-08-15 | 2023-08-21 | 32 | 2023-08-15 | 2023-08-21 | 5d | 2023-08-15 | 2023-08-21 | -1d | 0d |  | Admin Assistant | 40h |  |  |
| 44 | 5.2.2 | **Create venue shortlist** |  | 1d | 2023-08-22 | 2023-08-22 |  | 2023-08-22 | 2023-08-22 | 1d | 2023-08-22 | 2023-08-22 | -1d | 0d |  |  | 8h |  |  |
| 45 | 5.2.2.1 | Send shortlist to training manager |  | 1d | 2023-08-22 | 2023-08-22 | 43 | 2023-08-22 | 2023-08-22 | 1d | 2023-08-22 | 2023-08-22 | -1d | 0d |  | Admin Assistant | 8h |  |  |
| 46 | 5.2.3 | Get budget approval |  | 3d | 2023-08-23 | 2023-08-25 | 45 | 2023-08-23 | 2023-08-25 | 3d | 2023-08-23 | 2023-08-25 | -1d | 0d |  | Training Team Lead | 24h | 1,920 | 1,920 |
| 47 | 5.2.4 | Book venue |  | 1d | 2023-08-25 | 2023-08-25 | 46 | 2023-08-25 | 2023-08-25 | 1d | 2023-08-25 | 2023-08-25 | -1d | 0d | must start on 2023-08-25 | Pens [3 Packs]; Airfare [0.1%]; Sandwiches [2 Palette] |  | 281 | 281 |
| 48 | 5.3 | **Organise equipment** |  | 5d | 2023-08-21 | 2023-08-25 |  | 2023-08-21 | 2023-08-25 | 5d | 2023-08-21 | 2023-08-25 | 0d |  |  |  | 8h | 145 | 145 |
| 49 | 5.3.1 | **Source laptops for all trainers** |  | 5d | 2023-08-21 | 2023-08-25 |  | 2023-08-21 | 2023-08-25 | 5d | 2023-08-21 | 2023-08-25 |  |  |  | Laptop | 8h | 145 | 145 |
| 50 | 5.3.1.1 | Obtain laptop specifications | manual | 1d | 2023-08-21 | 2023-08-21 |  | 2023-08-21 | 2023-08-21 | 1d | 2023-08-21 | 2023-08-21 |  |  |  | John Matthews | 8h | 75 | 75 |

| ID | WBS | Task | Type | Duration | Start | Finish | Predecessors | Baseline start | Baseline finish | Baseline duration | Baseline 1 start | Baseline 1 finish | Total slack | Free slack | Constraint | Resources | Work | Cost | Baseline cost |
| --- | --- | --- | --- | --- | --- | --- | --- | --- | --- | --- | --- | --- | --- | --- | --- | --- | --- | --- | --- |
| 51 | 5.4 | **Travel and Accommodation** |  | 24d | 2023-08-28 | 2023-09-29 |  | 2023-08-28 | 2023-09-29 | 24d | 2023-08-28 | 2023-09-29 | 4d |  |  |  | 104h | 3,060 | 3,060 |
| 52 | 5.4.1 | Research local hotels |  | 7d | 2023-08-28 | 2023-09-29 | 47 | 2023-08-28 | 2023-09-29 | 7d | 2023-08-28 | 2023-09-29 | 11d |  |  | Admin Assistant | 56h |  |  |
| 53 | 5.4.2 | **Create hotel shortlist** |  | 5d | 2023-09-01 | 2023-09-08 |  | 2023-09-01 | 2023-09-08 | 5d | 2023-09-01 | 2023-09-08 | 0d |  |  |  | 40h | 2,560 | 2,560 |
| 54 | 5.4.2.1 | Send shortlist to training manager | manual | 1d | 2023-09-01 | 2023-09-01 |  | 2023-09-01 | 2023-09-01 | 1d | 2023-09-01 | 2023-09-01 |  |  | start no earlier than 2023-09-01 | Admin Assistant | 8h |  |  |
| 55 | 5.4.2.2 | Get budget approval |  | 4d | 2023-09-05 | 2023-09-08 | 54 | 2023-09-05 | 2023-09-08 | 4d | 2023-09-05 | 2023-09-08 | 15d | 0d |  | Training Team Lead | 32h | 2,560 | 2,560 |
| 56 | 5.4.3 | Book hotel |  | 1d | 2023-09-11 | 2023-09-11 | 55 | 2023-09-11 | 2023-09-11 | 1d | 2023-09-11 | 2023-09-11 | 15d | 0d |  | Admin Assistant | 8h |  |  |
| 57 | 5.4.4 | Hotel booked | milestone | 0d | 2023-09-11 | 2023-09-11 | 56 | 2023-09-11 | 2023-09-11 | 0d | 2023-09-11 | 2023-09-11 | 15d | 9d |  |  |  |  |  |
| 58 | 5.4.5 | Book flights |  | 1d | 2023-09-25 | 2023-09-25 | 57 | 2023-09-25 | 2023-09-25 | 1d | 2023-09-25 | 2023-09-25 | 6d | 0d | start no earlier than 2023-09-25 | Airfare [0.1%] |  | 500 | 500 |
| 59 | 5.4.6 | Flight booked | milestone | 0d | 2023-09-25 | 2023-09-25 | 58 | 2023-09-25 | 2023-09-25 | 0d | 2023-09-25 | 2023-09-25 | 6d |  |  |  |  |  |  |
| 60 | 5.5 | **Expenses** |  | 17d | 2023-09-22 | 2023-10-17 |  | 2023-09-22 | 2023-10-17 | 17d | 2023-09-22 | 2023-10-17 | 0d |  |  |  | 80h | 1,280 | 1,280 |
| 61 | 5.5.1 | Approve budget |  | 2d | 2023-10-05 | 2023-10-06 | 59, 41 | 2023-10-05 | 2023-10-06 | 2d | 2023-10-05 | 2023-10-06 | 0d |  |  | Training Team Lead | 16h | 1,280 | 1,280 |
| 62 | 5.5.2 | Organise company credit card |  | 7d | 2023-10-09 | 2023-10-17 | 61 | 2023-10-09 | 2023-10-17 | 7d | 2023-10-09 | 2023-10-17 | 0d |  |  | Admin Assistant | 56h |  |  |
| 63 | 5.5.3 | Print out expense forms |  | 1d | 2023-09-22 | 2023-09-22 | 55, 37 | 2023-09-22 | 2023-09-22 | 1d | 2023-09-22 | 2023-09-22 | 16d |  |  | Admin Assistant | 8h |  |  |
